| row_type | text | id | page | original_duration | early_start | total_float | level | parent_path | early_finish |
| --- | --- | --- | --- | --- | --- | --- | --- | --- | --- |
| activity | Notice to Proceed | MIL-1000 | 1 | 0 | 24-Jun-25 | 0 | 4 | Pre-Construction > Key Dates & Milestones |  |
| activity | Pre-Construction Survey | MIL-1010 | 1 | 3 | 24-Jun-25 | 13 | 4 | Pre-Construction > Key Dates & Milestones | 26-Jun-25 |
| activity | Mobilization | MIL-1020 | 1 | 3 | 14-Jul-25 | 0 | 4 | Pre-Construction > Key Dates & Milestones | 16-Jul-25 |
| activity | Construction Start | MIL-1030 | 1 | 0 | 17-Jul-25 | 0 | 4 | Pre-Construction > Key Dates & Milestones |  |
| activity | Project Duration Till Substantial Completion | MIL-1040 | 1 | 183 | 24-Jun-25 | 0 | 4 | Pre-Construction > Key Dates & Milestones | 23-Dec-25 |
| activity | Substantial Completion | MIL-1050 | 1 | 0 |  | 0 | 4 | Pre-Construction > Key Dates & Milestones | 23-Dec-25* |
| activity | Obtain Site Fence Permit and DOT Permits | PER-1000 | 1 | 14 | 24-Jun-25 | 2 | 4 | Pre-Construction > Permits | 14-Jul-25 |
| activity | Obtain Earthwork Permit | PER-1010 | 1 | 21 | 24-Jun-25 | 1 | 4 | Pre-Construction > Permits | 23-Jul-25 |
| activity | Obtain SOE Permit | PER-1020 | 1 | 28 | 24-Jun-25 | 7 | 4 | Pre-Construction > Permits | 01-Aug-25 |
| activity | Prepare & Submit Pre-Construction Photos | SUB-1060 | 1 | 1 | 24-Jun-25 | 1 | 6 | Procurement > Division 01: General > Spec Section S01010 - Summary of Work > Spec Section S01010 - Summary of Work - Submittals | 24-Jun-25 |
| activity | Prepare & Submit Final Progress Photos | SUB-1130 | 1 | 14 | 24-Oct-25 | 12 | 6 | Procurement > Division 01: General > Spec Section S01010 - Summary of Work > Spec Section S01010 - Summary of Work - Submittals | 12-Nov-25 |
| activity | Review & Approve Pre-Construction Photos | APP-1060 | 1 | 21 | 25-Jun-25 | 1 | 6 | Procurement > Division 01: General > Spec Section S01010 - Summary of Work > Spec Section S01010 - Summary of Work - Approvals | 15-Jul-25 |
| activity | Review & Approve Final Progress Photos | APP-2060 | 1 | 21 | 13-Nov-25 | 20 | 6 | Procurement > Division 01: General > Spec Section S01010 - Summary of Work > Spec Section S01010 - Summary of Work - Approvals | 03-Dec-25 |
| activity | Prepare & Submit Submittal Log | SUB-1220 | 1 | 1 | 24-Jun-25 | 1 | 6 | Procurement > Division 01: General > Spec Section S01010 - Summary of Work > Spec Section S01300 - Submittals | 24-Jun-25 |
| activity | Review & Approve Submittal Log | APP-2070 | 1 | 21 | 25-Jun-25 | 1 | 6 | Procurement > Division 01: General > Spec Section S01010 - Summary of Work > Spec Section S01300 - Submittals | 15-Jul-25 |
| activity | Prepare & Submit eCloseout Submittal Log | SUB-1250 | 1 | 10 | 24-Oct-25 | 16 | 6 | Procurement > Division 01: General > Spec Section S01010 - Summary of Work > Spec Section S01300 - Submittals | 06-Nov-25 |
| activity | Review & Approve eCloseout Submittal Log | APP-2080 | 1 | 21 | 07-Nov-25 | 26 | 6 | Procurement > Division 01: General > Spec Section S01010 - Summary of Work > Spec Section S01300 - Submittals | 27-Nov-25 |
| activity | Prepare & Submit Preliminary Schedule | SUB-1260 | 1 | 15 | 24-Jun-25 | 78 | 6 | Procurement > Division 01: General > Spec Section 01312 - Progress Schedule > Spec Section 01312 - Progress Schedule - Submittals | 15-Jul-25 |
| activity | Prepare & Submit Baseline Schedule | SUB-1280 | 1 | 3 | 06-Aug-25 | 78 | 6 | Procurement > Division 01: General > Spec Section 01312 - Progress Schedule > Spec Section 01312 - Progress Schedule - Submittals | 08-Aug-25 |
| activity | Review & Approve Preliminary Schedule | APP-1180 | 1 | 21 | 16-Jul-25 | 112 | 6 | Procurement > Division 01: General > Spec Section 01312 - Progress Schedule > Spec Section 01312 - Progress Schedule - Approvals | 05-Aug-25 |
| activity | Review & Approve Baseline Schedule | APP-1880 | 1 | 21 | 09-Aug-25 | 116 | 6 | Procurement > Division 01: General > Spec Section 01312 - Progress Schedule > Spec Section 01312 - Progress Schedule - Approvals | 29-Aug-25 |
| activity | Prepare & Submit Security Guard Certs | SUB-1600 | 1 | 3 | 24-Jun-25 | 5 | 6 | Procurement > Division 01: General > Spec Section S01500 - Temporary Facilities & Controls > Spec Section S01500 - Temporary Facilities & Controls - Submittals | 26-Jun-25 |
| activity | Prepare & Submit Temporary Fence Plan | SUB-1610 | 1 | 3 | 24-Jun-25 | 5 | 6 | Procurement > Division 01: General > Spec Section S01500 - Temporary Facilities & Controls > Spec Section S01500 - Temporary Facilities & Controls - Submittals | 26-Jun-25 |
| activity | Prepare & Submit Dust Control Plan | SUB-1620 | 1 | 3 | 24-Jun-25 | 5 | 6 | Procurement > Division 01: General > Spec Section S01500 - Temporary Facilities & Controls > Spec Section S01500 - Temporary Facilities & Controls - Submittals | 26-Jun-25 |
| activity | Review & Approve Security Guard Certs | APP-2110 | 1 | 21 | 27-Jun-25 | 7 | 6 | Procurement > Division 01: General > Spec Section S01500 - Temporary Facilities & Controls > Spec Section S01500 - Temporary Facilities & Controls - Approvals | 17-Jul-25 |
| activity | Review & Approve Temporary Fence Plan | APP-1110 | 1 | 21 | 27-Jun-25 | 7 | 6 | Procurement > Division 01: General > Spec Section S01500 - Temporary Facilities & Controls > Spec Section S01500 - Temporary Facilities & Controls - Approvals | 17-Jul-25 |
| activity | Review & Approve Dust Control Plan | APP-1220 | 1 | 21 | 27-Jun-25 | 7 | 6 | Procurement > Division 01: General > Spec Section S01500 - Temporary Facilities & Controls > Spec Section S01500 - Temporary Facilities & Controls - Approvals | 17-Jul-25 |
| activity | Prepare & Submit Contractor Quality Control Plan | SUB-1780 | 1 | 1 | 24-Jun-25 | 1 | 5 | Procurement > Division 01: General > Spec Section S01400 - Quality Control | 24-Jun-25 |
| activity | Review & Approve Contractor Quality Control Plan | APP-1230 | 2 | 21 | 25-Jun-25 | 1 | 5 | Procurement > Division 01: General > Spec Section S01400 - Quality Control | 15-Jul-25 |
| activity | Prepare & Submit Waste Management Plan | SUB-1800 | 2 | 1 | 24-Jun-25 | 1 | 5 | Procurement > Division 01: General > Spec Section 01524 - Construction Waste Management | 24-Jun-25 |
| activity | Review & Approve Waste Management Plan | APP-1120 | 2 | 21 | 25-Jun-25 | 1 | 5 | Procurement > Division 01: General > Spec Section 01524 - Construction Waste Management | 15-Jul-25 |
| activity | Prepare & Submit Site Safety Plan | SUB-1020 | 2 | 6 | 24-Jun-25 | 1 | 5 | Procurement > Division 01: General > Spec Section 01535 - Safety Program | 01-Jul-25 |
| activity | Prepare & Submit Safety Program Overview | SUB-1840 | 2 | 6 | 24-Jun-25 | 1 | 5 | Procurement > Division 01: General > Spec Section 01535 - Safety Program | 01-Jul-25 |
| activity | Review & Approve Site Safety Plan | APP-1020 | 2 | 14 | 02-Jul-25 | 1 | 5 | Procurement > Division 01: General > Spec Section 01535 - Safety Program | 15-Jul-25 |
| activity | Review & Approve Safety Program Overview | APP-1240 | 2 | 14 | 02-Jul-25 | 1 | 5 | Procurement > Division 01: General > Spec Section 01535 - Safety Program | 15-Jul-25 |
| activity | Prepare & Submit Certificate of Insurance | SUB-1860 | 2 | 10 | 24-Jun-25 | 1 | 6 | Procurement > Division 02: Sitework > Spec Section 02081 - Asbestos Abatement > Spec Section 02081 - Asbestos Abatement - Submittals | 08-Jul-25 |
| activity | Prepare & Submit Health & Safety Plan | SUB-1870 | 2 | 10 | 24-Jun-25 | 1 | 6 | Procurement > Division 02: Sitework > Spec Section 02081 - Asbestos Abatement > Spec Section 02081 - Asbestos Abatement - Submittals | 08-Jul-25 |
| activity | Prepare & Submit Emergency Action Plan | SUB-1880 | 2 | 10 | 24-Jun-25 | 1 | 6 | Procurement > Division 02: Sitework > Spec Section 02081 - Asbestos Abatement > Spec Section 02081 - Asbestos Abatement - Submittals | 08-Jul-25 |
| activity | Prepare & Submit Fall Protection Plan | SUB-1890 | 2 | 10 | 24-Jun-25 | 1 | 6 | Procurement > Division 02: Sitework > Spec Section 02081 - Asbestos Abatement > Spec Section 02081 - Asbestos Abatement - Submittals | 08-Jul-25 |
| activity | Prepare & Submit Permits, State Licenses & Notifications | SUB-1900 | 2 | 10 | 24-Jun-25 | 1 | 6 | Procurement > Division 02: Sitework > Spec Section 02081 - Asbestos Abatement > Spec Section 02081 - Asbestos Abatement - Submittals | 08-Jul-25 |
| activity | Prepare & Submit Qualifications of Workers | SUB-1910 | 2 | 10 | 24-Jun-25 | 1 | 6 | Procurement > Division 02: Sitework > Spec Section 02081 - Asbestos Abatement > Spec Section 02081 - Asbestos Abatement - Submittals | 08-Jul-25 |
| activity | Prepare & Submit Respiratory Protection Program | SUB-1920 | 2 | 10 | 24-Jun-25 | 1 | 6 | Procurement > Division 02: Sitework > Spec Section 02081 - Asbestos Abatement > Spec Section 02081 - Asbestos Abatement - Submittals | 08-Jul-25 |
| activity | Prepare & Submit Historic Airborne Fiber Data for Similar Projects | SUB-1930 | 2 | 10 | 24-Jun-25 | 1 | 6 | Procurement > Division 02: Sitework > Spec Section 02081 - Asbestos Abatement > Spec Section 02081 - Asbestos Abatement - Submittals | 08-Jul-25 |
| activity | Prepare & Submit Asbestos Landfill Site | SUB-1940 | 2 | 10 | 24-Jun-25 | 1 | 6 | Procurement > Division 02: Sitework > Spec Section 02081 - Asbestos Abatement > Spec Section 02081 - Asbestos Abatement - Submittals | 08-Jul-25 |
| activity | Prepare & Submit Asbestos Equipment & MSDS | SUB-1950 | 2 | 10 | 24-Jun-25 | 1 | 6 | Procurement > Division 02: Sitework > Spec Section 02081 - Asbestos Abatement > Spec Section 02081 - Asbestos Abatement - Submittals | 08-Jul-25 |
| activity | Prepare & Submit Asbestos Abatement Work & Removal Plan | SUB-1960 | 2 | 10 | 24-Jun-25 | 1 | 6 | Procurement > Division 02: Sitework > Spec Section 02081 - Asbestos Abatement > Spec Section 02081 - Asbestos Abatement - Submittals | 08-Jul-25 |
| activity | Prepare & Submit Sample Daily Log | SUB-1970 | 2 | 10 | 24-Jun-25 | 1 | 6 | Procurement > Division 02: Sitework > Spec Section 02081 - Asbestos Abatement > Spec Section 02081 - Asbestos Abatement - Submittals | 08-Jul-25 |
| activity | Prepare & Submit Schedule of Work Changes | SUB-1980 | 2 | 10 | 24-Jun-25 | 1 | 6 | Procurement > Division 02: Sitework > Spec Section 02081 - Asbestos Abatement > Spec Section 02081 - Asbestos Abatement - Submittals | 08-Jul-25 |
| activity | Prepare & Submit Waste Shipment Records | SUB-1990 | 2 | 10 | 24-Jun-25 | 1 | 6 | Procurement > Division 02: Sitework > Spec Section 02081 - Asbestos Abatement > Spec Section 02081 - Asbestos Abatement - Submittals | 08-Jul-25 |
| activity | Prepare & Submit Copy of Log Book | SUB-2000 | 2 | 10 | 24-Jun-25 | 1 | 6 | Procurement > Division 02: Sitework > Spec Section 02081 - Asbestos Abatement > Spec Section 02081 - Asbestos Abatement - Submittals | 08-Jul-25 |
| activity | Prepare & Submit Personal air monitoring records pertaining to this project | SUB-2010 | 2 | 10 | 24-Jun-25 | 1 | 6 | Procurement > Division 02: Sitework > Spec Section 02081 - Asbestos Abatement > Spec Section 02081 - Asbestos Abatement - Submittals | 08-Jul-25 |
| activity | Prepare & Submit Compilation of all Completed and Signed Waste Shipment Record forms. | SUB-2020 | 2 | 10 | 24-Jun-25 | 1 | 6 | Procurement > Division 02: Sitework > Spec Section 02081 - Asbestos Abatement > Spec Section 02081 - Asbestos Abatement - Submittals | 08-Jul-25 |
| activity | Prepare & Submit Copies of Workers' Licences | SUB-2030 | 2 | 10 | 24-Jun-25 | 1 | 6 | Procurement > Division 02: Sitework > Spec Section 02081 - Asbestos Abatement > Spec Section 02081 - Asbestos Abatement - Submittals | 08-Jul-25 |
| activity | Review & Approve Certificate of Insurance | APP-1630 | 2 | 21 | 09-Jul-25 | 1 | 6 | Procurement > Division 02: Sitework > Spec Section 02081 - Asbestos Abatement > Spec Section 02081 - Asbestos Abatement - Approvals | 29-Jul-25 |
| activity | Review & Approve Health & Safety Plan | APP-1640 | 2 | 21 | 09-Jul-25 | 1 | 6 | Procurement > Division 02: Sitework > Spec Section 02081 - Asbestos Abatement > Spec Section 02081 - Asbestos Abatement - Approvals | 29-Jul-25 |
| activity | Review & Approve Emergency Action Plan | APP-1650 | 2 | 21 | 09-Jul-25 | 1 | 6 | Procurement > Division 02: Sitework > Spec Section 02081 - Asbestos Abatement > Spec Section 02081 - Asbestos Abatement - Approvals | 29-Jul-25 |
| activity | Review & Approve Fall Protection Plan | APP-1660 | 2 | 21 | 09-Jul-25 | 1 | 6 | Procurement > Division 02: Sitework > Spec Section 02081 - Asbestos Abatement > Spec Section 02081 - Asbestos Abatement - Approvals | 29-Jul-25 |
| activity | Review & Approve Permits, State Licenses & Notifications | APP-1670 | 2 | 21 | 09-Jul-25 | 1 | 6 | Procurement > Division 02: Sitework > Spec Section 02081 - Asbestos Abatement > Spec Section 02081 - Asbestos Abatement - Approvals | 29-Jul-25 |
| activity | Review & Approve Qualifications of Workers | APP-1680 | 2 | 21 | 09-Jul-25 | 1 | 6 | Procurement > Division 02: Sitework > Spec Section 02081 - Asbestos Abatement > Spec Section 02081 - Asbestos Abatement - Approvals | 29-Jul-25 |
| activity | Review & Approve Respiratory Protection Program | APP-1690 | 2 | 21 | 09-Jul-25 | 1 | 6 | Procurement > Division 02: Sitework > Spec Section 02081 - Asbestos Abatement > Spec Section 02081 - Asbestos Abatement - Approvals | 29-Jul-25 |
| activity | Review & Approve Historic Airborne Fiber Data for Similar Projects | APP-1700 | 2 | 21 | 09-Jul-25 | 1 | 6 | Procurement > Division 02: Sitework > Spec Section 02081 - Asbestos Abatement > Spec Section 02081 - Asbestos Abatement - Approvals | 29-Jul-25 |
| activity | Review & Approve Asbestos Landfill Site | APP-1710 | 2 | 21 | 09-Jul-25 | 1 | 6 | Procurement > Division 02: Sitework > Spec Section 02081 - Asbestos Abatement > Spec Section 02081 - Asbestos Abatement - Approvals | 29-Jul-25 |
| activity | Review & Approve Asbestos Equipment & MSDS | APP-1720 | 2 | 21 | 09-Jul-25 | 1 | 6 | Procurement > Division 02: Sitework > Spec Section 02081 - Asbestos Abatement > Spec Section 02081 - Asbestos Abatement - Approvals | 29-Jul-25 |
| activity | Review & Approve Asbestos Abatement Work & Removal Plan | APP-1730 | 2 | 21 | 09-Jul-25 | 1 | 6 | Procurement > Division 02: Sitework > Spec Section 02081 - Asbestos Abatement > Spec Section 02081 - Asbestos Abatement - Approvals | 29-Jul-25 |
| activity | Review & Approve Sample Daily Log | APP-1740 | 2 | 21 | 09-Jul-25 | 1 | 6 | Procurement > Division 02: Sitework > Spec Section 02081 - Asbestos Abatement > Spec Section 02081 - Asbestos Abatement - Approvals | 29-Jul-25 |
| activity | Review & Approve Schedule of Work Changes | APP-1750 | 2 | 21 | 09-Jul-25 | 1 | 6 | Procurement > Division 02: Sitework > Spec Section 02081 - Asbestos Abatement > Spec Section 02081 - Asbestos Abatement - Approvals | 29-Jul-25 |
| activity | Review & Approve Waste Shipment Records | APP-1760 | 2 | 21 | 09-Jul-25 | 1 | 6 | Procurement > Division 02: Sitework > Spec Section 02081 - Asbestos Abatement > Spec Section 02081 - Asbestos Abatement - Approvals | 29-Jul-25 |
| activity | Review & Approve Copy of Log Book | APP-1770 | 3 | 21 | 09-Jul-25 | 1 | 6 | Procurement > Division 02: Sitework > Spec Section 02081 - Asbestos Abatement > Spec Section 02081 - Asbestos Abatement - Approvals | 29-Jul-25 |
| activity | Review & Approve Personal air monitoring records pertaining to this project | APP-1780 | 3 | 21 | 09-Jul-25 | 1 | 6 | Procurement > Division 02: Sitework > Spec Section 02081 - Asbestos Abatement > Spec Section 02081 - Asbestos Abatement - Approvals | 29-Jul-25 |
| activity | Review & Approve Compilation of all Completed and Signed Waste Shipment Record forms. | APP-1790 | 3 | 21 | 09-Jul-25 | 1 | 6 | Procurement > Division 02: Sitework > Spec Section 02081 - Asbestos Abatement > Spec Section 02081 - Asbestos Abatement - Approvals | 29-Jul-25 |

| row_type | text | id | page | original_duration | early_start | total_float | level | parent_path | early_finish |
| --- | --- | --- | --- | --- | --- | --- | --- | --- | --- |
| activity | Review & Approve Copies of Workers' Licences | APP-1800 | 3 | 21 | 09-Jul-25 | 1 | 6 | Procurement > Division 02: Sitework > Spec Section 02081 - Asbestos Abatement > Spec Section 02081 - Asbestos Abatement - Approvals | 29-Jul-25 |
| activity | Prepare & Submit Soil Sampling Plan | SUB-1010 | 3 | 5 | 24-Jun-25 | 0 | 6 | Procurement > Division 02: Sitework > Spec Section 02090 - Environmental Management of Excavated Material & Fill/Backfill > Spec Section 02090 - Environmental Management of Excavated Material & Fill/Backfill - Submittals | 30-Jun-25 |
| activity | Prepare & Submit Qualified Environmental Professional (QEP) credentials | SUB-2220 | 3 | 5 | 24-Jun-25 | 9 | 6 | Procurement > Division 02: Sitework > Spec Section 02090 - Environmental Management of Excavated Material & Fill/Backfill > Spec Section 02090 - Environmental Management of Excavated Material & Fill/Backfill - Submittals | 30-Jun-25 |
| activity | Prepare & Submit Documentation of Proper Disposal | SUB-2290 | 3 | 12 | 24-Jun-25 | 2 | 6 | Procurement > Division 02: Sitework > Spec Section 02090 - Environmental Management of Excavated Material & Fill/Backfill > Spec Section 02090 - Environmental Management of Excavated Material & Fill/Backfill - Submittals | 10-Jul-25 |
| activity | Prepare & Submit Excavated Material Disposal Plan | SUB-1050 | 3 | 6 | 21-Jul-25 | 0 | 6 | Procurement > Division 02: Sitework > Spec Section 02090 - Environmental Management of Excavated Material & Fill/Backfill > Spec Section 02090 - Environmental Management of Excavated Material & Fill/Backfill - Submittals | 28-Jul-25 |
| activity | Review & Approve Soil Sampling Plan | APP-1000 | 3 | 16 | 01-Jul-25 | 0 | 6 | Procurement > Division 02: Sitework > Spec Section 02090 - Environmental Management of Excavated Material & Fill/Backfill > Spec Section 02090 - Environmental Management of Excavated Material & Fill/Backfill - Approvals | 16-Jul-25 |
| activity | Review & Approve Qualified Environmental Professional (QEP) credentials | APP-2140 | 3 | 21 | 01-Jul-25 | 14 | 6 | Procurement > Division 02: Sitework > Spec Section 02090 - Environmental Management of Excavated Material & Fill/Backfill > Spec Section 02090 - Environmental Management of Excavated Material & Fill/Backfill - Approvals | 21-Jul-25 |
| activity | Review & Approve Documentation of Proper Disposal | APP-1250 | 3 | 21 | 11-Jul-25 | 4 | 6 | Procurement > Division 02: Sitework > Spec Section 02090 - Environmental Management of Excavated Material & Fill/Backfill > Spec Section 02090 - Environmental Management of Excavated Material & Fill/Backfill - Approvals | 31-Jul-25 |
| activity | Review & Approve Excavated Material Disposal Plan | APP-1040 | 3 | 7 | 29-Jul-25 | 0 | 6 | Procurement > Division 02: Sitework > Spec Section 02090 - Environmental Management of Excavated Material & Fill/Backfill > Spec Section 02090 - Environmental Management of Excavated Material & Fill/Backfill - Approvals | 04-Aug-25 |
| activity | Prepare & Submit Existing Conditions Topo Survey | SUB-2350 | 3 | 3 | 24-Jun-25 | 9 | 5 | Procurement > Division 02: Sitework > Spec Section 02100 - Site Preparation | 26-Jun-25 |
| activity | Prepare & Submit Surveyor Qualifications - Cornerstone | SUB-2360 | 3 | 3 | 24-Jun-25 | 9 | 5 | Procurement > Division 02: Sitework > Spec Section 02100 - Site Preparation | 26-Jun-25 |
| activity | Review & Approve Existing Conditions Topo Survey | APP-1140 | 3 | 21 | 27-Jun-25 | 14 | 5 | Procurement > Division 02: Sitework > Spec Section 02100 - Site Preparation | 17-Jul-25 |
| activity | Review & Approve Surveyor Qualifications - Cornerstone | APP-2150 | 3 | 21 | 27-Jun-25 | 14 | 5 | Procurement > Division 02: Sitework > Spec Section 02100 - Site Preparation | 17-Jul-25 |
| activity | Prepare & Submit Final Survey | SUB-2370 | 3 | 26 | 22-Oct-25 | 2 | 5 | Procurement > Division 02: Sitework > Spec Section 02100 - Site Preparation | 26-Nov-25 |
| activity | Review & Approve Final Survey | APP-2150 | 3 | 21 | 27-Nov-25 | 6 | 5 | Procurement > Division 02: Sitework > Spec Section 02100 - Site Preparation | 17-Dec-25 |
| activity | Prepare & Submit Micropile and Secant Pile Drilling Equipment | SUB-2460 | 3 | 1 | 24-Jun-25 | 19 | 6 | Procurement > Division 02: Sitework > Spec Section 02200 - Earthwork > Spec Section 02200 - Earthwork - Submittals | 24-Jun-25 |
| activity | Prepare & Submit Erosion Sediment Control Plan | SUB-1000 | 3 | 5 | 24-Jun-25 | 6 | 6 | Procurement > Division 02: Sitework > Spec Section 02200 - Earthwork > Spec Section 02200 - Earthwork - Submittals | 30-Jun-25 |
| activity | Prepare & Submit Sediment & Erosion Control Product Data | SUB-2410 | 3 | 5 | 24-Jun-25 | 6 | 6 | Procurement > Division 02: Sitework > Spec Section 02200 - Earthwork > Spec Section 02200 - Earthwork - Submittals | 30-Jun-25 |
| activity | Prepare & Submit Sediment & Erosion Control Representative Cert. | SUB-2440 | 3 | 5 | 24-Jun-25 | 6 | 6 | Procurement > Division 02: Sitework > Spec Section 02200 - Earthwork > Spec Section 02200 - Earthwork - Submittals | 30-Jun-25 |
| activity | Prepare & Submit Vibration Monitoring Plan | SUB-1030 | 3 | 16 | 24-Jun-25 | 6 | 6 | Procurement > Division 02: Sitework > Spec Section 02200 - Earthwork > Spec Section 02200 - Earthwork - Submittals | 16-Jul-25 |
| activity | Prepare & Submit SOE Shop Drawings | SUB-1040 | 3 | 18 | 24-Jun-25 | 23 | 6 | Procurement > Division 02: Sitework > Spec Section 02200 - Earthwork > Spec Section 02200 - Earthwork - Submittals | 18-Jul-25 |
| activity | Prepare & Submit Concrete Mix Design for Heelblocks | SUB-2430 | 3 | 22 | 24-Jun-25 | 57 | 6 | Procurement > Division 02: Sitework > Spec Section 02200 - Earthwork > Spec Section 02200 - Earthwork - Submittals | 24-Jul-25 |
| activity | Prepare & Submit Compaction Equipment Product Data | SUB-2480 | 3 | 22 | 24-Jun-25 | 57 | 6 | Procurement > Division 02: Sitework > Spec Section 02200 - Earthwork > Spec Section 02200 - Earthwork - Submittals | 24-Jul-25 |
| activity | Review & Approve Micropile and Secant Pile Drilling Equipment | APP-1290 | 3 | 21 | 25-Jun-25 | 28 | 6 | Procurement > Division 02: Sitework > Spec Section 02200 - Earthwork > Spec Section 02200 - Earthwork - Approvals | 15-Jul-25 |
| activity | Review & Approve Erosion Sediment Control Plan | APP-1010 | 3 | 21 | 01-Jul-25 | 9 | 6 | Procurement > Division 02: Sitework > Spec Section 02200 - Earthwork > Spec Section 02200 - Earthwork - Approvals | 21-Jul-25 |
| activity | Review & Approve Sediment & Erosion Control Product Data | APP-1160 | 3 | 21 | 01-Jul-25 | 9 | 6 | Procurement > Division 02: Sitework > Spec Section 02200 - Earthwork > Spec Section 02200 - Earthwork - Approvals | 21-Jul-25 |
| activity | Review & Approve Sediment & Erosion Control Representative Cert. | APP-1280 | 3 | 21 | 01-Jul-25 | 9 | 6 | Procurement > Division 02: Sitework > Spec Section 02200 - Earthwork > Spec Section 02200 - Earthwork - Approvals | 21-Jul-25 |
| activity | Review & Approve Vibration Monitoring Plan | APP-1030 | 3 | 14 | 17-Jul-25 | 8 | 6 | Procurement > Division 02: Sitework > Spec Section 02200 - Earthwork > Spec Section 02200 - Earthwork - Approvals | 30-Jul-25 |
| activity | Review & Approve SOE Shop Drawings | APP-1050 | 3 | 21 | 19-Jul-25 | 33 | 6 | Procurement > Division 02: Sitework > Spec Section 02200 - Earthwork > Spec Section 02200 - Earthwork - Approvals | 08-Aug-25 |
| activity | Review & Approve Concrete Mix Design for Heelblocks | APP-1270 | 3 | 21 | 25-Jul-25 | 83 | 6 | Procurement > Division 02: Sitework > Spec Section 02200 - Earthwork > Spec Section 02200 - Earthwork - Approvals | 14-Aug-25 |
| activity | Review & Approve Compaction Equipment Product Data | APP-1310 | 3 | 21 | 25-Jul-25 | 83 | 6 | Procurement > Division 02: Sitework > Spec Section 02200 - Earthwork > Spec Section 02200 - Earthwork - Approvals | 14-Aug-25 |
| activity | Prepare & Submit Secant Pile Product Data | SUB-2690 | 3 | 19 | 24-Jun-25 | 2 | 6 | Procurement > Division 02: Sitework > Spec Section 02363 - Secant Pile Wall > Spec Section 02363 - Secant Pile Wall - Submittals | 21-Jul-25 |
| activity | Prepare & Submit Secant Pile Equipment Product Data | SUB-2700 | 3 | 19 | 24-Jun-25 | 2 | 6 | Procurement > Division 02: Sitework > Spec Section 02363 - Secant Pile Wall > Spec Section 02363 - Secant Pile Wall - Submittals | 21-Jul-25 |
| activity | Prepare & Submit Secant Pile Installation Procedures | SUB-2710 | 4 | 19 | 24-Jun-25 | 2 | 6 | Procurement > Division 02: Sitework > Spec Section 02363 - Secant Pile Wall > Spec Section 02363 - Secant Pile Wall - Submittals | 21-Jul-25 |
| activity | Prepare & Submit Secant Pile Schedule | SUB-2720 | 4 | 19 | 24-Jun-25 | 2 | 6 | Procurement > Division 02: Sitework > Spec Section 02363 - Secant Pile Wall > Spec Section 02363 - Secant Pile Wall - Submittals | 21-Jul-25 |
| activity | Prepare & Submit Secant Pile Identification Plan | SUB-2730 | 4 | 19 | 24-Jun-25 | 2 | 6 | Procurement > Division 02: Sitework > Spec Section 02363 - Secant Pile Wall > Spec Section 02363 - Secant Pile Wall - Submittals | 21-Jul-25 |
| activity | Prepare & Submit Secant Pile Driller's Logs | SUB-2740 | 4 | 19 | 24-Jun-25 | 2 | 6 | Procurement > Division 02: Sitework > Spec Section 02363 - Secant Pile Wall > Spec Section 02363 - Secant Pile Wall - Submittals | 21-Jul-25 |
| activity | Prepare & Submit Secant Pile Survey | SUB-2750 | 4 | 19 | 24-Jun-25 | 2 | 6 | Procurement > Division 02: Sitework > Spec Section 02363 - Secant Pile Wall > Spec Section 02363 - Secant Pile Wall - Submittals | 21-Jul-25 |
| activity | Prepare & Submit Secant Pile Steel Material Certificates | SUB-2760 | 4 | 19 | 24-Jun-25 | 2 | 6 | Procurement > Division 02: Sitework > Spec Section 02363 - Secant Pile Wall > Spec Section 02363 - Secant Pile Wall - Submittals | 21-Jul-25 |
| activity | Prepare & Submit Secant Pile Contractor Qualifications | SUB-2770 | 4 | 19 | 24-Jun-25 | 2 | 6 | Procurement > Division 02: Sitework > Spec Section 02363 - Secant Pile Wall > Spec Section 02363 - Secant Pile Wall - Submittals | 21-Jul-25 |
| activity | Review & Approve Secant Pile Product Data | APP-1320 | 4 | 21 | 22-Jul-25 | 2 | 6 | Procurement > Division 02: Sitework > Spec Section 02363 - Secant Pile Wall > Spec Section 02363 - Secant Pile Wall - Approvals | 11-Aug-25 |
| activity | Review & Approve Secant Pile Equipment Product Data | APP-1330 | 4 | 21 | 22-Jul-25 | 2 | 6 | Procurement > Division 02: Sitework > Spec Section 02363 - Secant Pile Wall > Spec Section 02363 - Secant Pile Wall - Approvals | 11-Aug-25 |
| activity | Review & Approve Secant Pile Installation Procedures | APP-1340 | 4 | 21 | 22-Jul-25 | 2 | 6 | Procurement > Division 02: Sitework > Spec Section 02363 - Secant Pile Wall > Spec Section 02363 - Secant Pile Wall - Approvals | 11-Aug-25 |
| activity | Review & Approve Secant Pile Schedule | APP-1350 | 4 | 21 | 22-Jul-25 | 2 | 6 | Procurement > Division 02: Sitework > Spec Section 02363 - Secant Pile Wall > Spec Section 02363 - Secant Pile Wall - Approvals | 11-Aug-25 |
| activity | Review & Approve Secant Pile Identification Plan | APP-1360 | 4 | 21 | 22-Jul-25 | 2 | 6 | Procurement > Division 02: Sitework > Spec Section 02363 - Secant Pile Wall > Spec Section 02363 - Secant Pile Wall - Approvals | 11-Aug-25 |
| activity | Review & Approve Secant Pile Driller's Logs | APP-1370 | 4 | 21 | 22-Jul-25 | 2 | 6 | Procurement > Division 02: Sitework > Spec Section 02363 - Secant Pile Wall > Spec Section 02363 - Secant Pile Wall - Approvals | 11-Aug-25 |
| activity | Review & Approve Secant Pile Survey | APP-1380 | 4 | 21 | 22-Jul-25 | 2 | 6 | Procurement > Division 02: Sitework > Spec Section 02363 - Secant Pile Wall > Spec Section 02363 - Secant Pile Wall - Approvals | 11-Aug-25 |
| activity | Review & Approve Secant Pile Steel Material Certificates | APP-1390 | 4 | 21 | 22-Jul-25 | 2 | 6 | Procurement > Division 02: Sitework > Spec Section 02363 - Secant Pile Wall > Spec Section 02363 - Secant Pile Wall - Approvals | 11-Aug-25 |
| activity | Review & Approve Secant Pile Contractor Qualifications | APP-1400 | 4 | 21 | 22-Jul-25 | 2 | 6 | Procurement > Division 02: Sitework > Spec Section 02363 - Secant Pile Wall > Spec Section 02363 - Secant Pile Wall - Approvals | 11-Aug-25 |
| activity | Prepare & Submit Micropile Product Data | SUB-2870 | 4 | 22 | 24-Jun-25 | 29 | 6 | Procurement > Division 02: Sitework > Spec Section 02365 - Micropile Foundations > Spec Section 02365 - Micropile Foundations - Submittals | 24-Jul-25 |
| activity | Prepare & Submit Micropile Equipment Product Data | SUB-2880 | 4 | 22 | 24-Jun-25 | 29 | 6 | Procurement > Division 02: Sitework > Spec Section 02365 - Micropile Foundations > Spec Section 02365 - Micropile Foundations - Submittals | 24-Jul-25 |
| activity | Prepare & Submit Micropile Installation Procedures | SUB-2890 | 4 | 22 | 24-Jun-25 | 29 | 6 | Procurement > Division 02: Sitework > Spec Section 02365 - Micropile Foundations > Spec Section 02365 - Micropile Foundations - Submittals | 24-Jul-25 |
| activity | Prepare & Submit Micropile Schedule | SUB-2900 | 4 | 22 | 24-Jun-25 | 29 | 6 | Procurement > Division 02: Sitework > Spec Section 02365 - Micropile Foundations > Spec Section 02365 - Micropile Foundations - Submittals | 24-Jul-25 |
| activity | Prepare & Submit Micropile Identification Plan | SUB-2910 | 4 | 22 | 24-Jun-25 | 29 | 6 | Procurement > Division 02: Sitework > Spec Section 02365 - Micropile Foundations > Spec Section 02365 - Micropile Foundations - Submittals | 24-Jul-25 |
| activity | Prepare & Submit Micropile Driller's Logs | SUB-2920 | 4 | 22 | 24-Jun-25 | 29 | 6 | Procurement > Division 02: Sitework > Spec Section 02365 - Micropile Foundations > Spec Section 02365 - Micropile Foundations - Submittals | 24-Jul-25 |
| activity | Prepare & Submit Micropile Survey | SUB-2930 | 4 | 22 | 24-Jun-25 | 29 | 6 | Procurement > Division 02: Sitework > Spec Section 02365 - Micropile Foundations > Spec Section 02365 - Micropile Foundations - Submittals | 24-Jul-25 |
| activity | Prepare & Submit Micropile Steel Material Certificates | SUB-2940 | 4 | 22 | 24-Jun-25 | 29 | 6 | Procurement > Division 02: Sitework > Spec Section 02365 - Micropile Foundations > Spec Section 02365 - Micropile Foundations - Submittals | 24-Jul-25 |
| activity | Prepare & Submit Micropile Contractor Qualifications | SUB-2950 | 4 | 22 | 24-Jun-25 | 29 | 6 | Procurement > Division 02: Sitework > Spec Section 02365 - Micropile Foundations > Spec Section 02365 - Micropile Foundations - Submittals | 24-Jul-25 |
| activity | Review & Approve Micropile Product Data | APP-1410 | 4 | 21 | 25-Jul-25 | 42 | 6 | Procurement > Division 02: Sitework > Spec Section 02365 - Micropile Foundations > Spec Section 02365 - Micropile Foundations - Approvals | 14-Aug-25 |
| activity | Review & Approve Micropile Equipment Product Data | APP-1420 | 4 | 21 | 25-Jul-25 | 42 | 6 | Procurement > Division 02: Sitework > Spec Section 02365 - Micropile Foundations > Spec Section 02365 - Micropile Foundations - Approvals | 14-Aug-25 |
| activity | Review & Approve Micropile Installation Procedures | APP-1430 | 4 | 21 | 25-Jul-25 | 42 | 6 | Procurement > Division 02: Sitework > Spec Section 02365 - Micropile Foundations > Spec Section 02365 - Micropile Foundations - Approvals | 14-Aug-25 |
| activity | Review & Approve Micropile Schedule | APP-1440 | 4 | 21 | 25-Jul-25 | 42 | 6 | Procurement > Division 02: Sitework > Spec Section 02365 - Micropile Foundations > Spec Section 02365 - Micropile Foundations - Approvals | 14-Aug-25 |
| activity | Review & Approve Micropile Identification Plan | APP-1450 | 4 | 21 | 25-Jul-25 | 42 | 6 | Procurement > Division 02: Sitework > Spec Section 02365 - Micropile Foundations > Spec Section 02365 - Micropile Foundations - Approvals | 14-Aug-25 |
| activity | Review & Approve Micropile Driller's Logs | APP-1460 | 4 | 21 | 25-Jul-25 | 42 | 6 | Procurement > Division 02: Sitework > Spec Section 02365 - Micropile Foundations > Spec Section 02365 - Micropile Foundations - Approvals | 14-Aug-25 |
| activity | Review & Approve Micropile Survey | APP-1470 | 4 | 21 | 25-Jul-25 | 42 | 6 | Procurement > Division 02: Sitework > Spec Section 02365 - Micropile Foundations > Spec Section 02365 - Micropile Foundations - Approvals | 14-Aug-25 |
| activity | Review & Approve Micropile Steel Material Certificates | APP-1480 | 4 | 21 | 25-Jul-25 | 42 | 6 | Procurement > Division 02: Sitework > Spec Section 02365 - Micropile Foundations > Spec Section 02365 - Micropile Foundations - Approvals | 14-Aug-25 |
| activity | Review & Approve Micropile Contractor Qualifications | APP-1490 | 4 | 21 | 25-Jul-25 | 42 | 6 | Procurement > Division 02: Sitework > Spec Section 02365 - Micropile Foundations > Spec Section 02365 - Micropile Foundations - Approvals | 14-Aug-25 |
| activity | Prepare & Submit Hydrant Permit | SUB-3050 | 4 | 22 | 24-Jun-25 | 2 | 5 | Procurement > Division 02: Sitework > Spec Section 02510 - Water Distribution System | 24-Jul-25 |
| activity | Review & Approve Hydrant Permit | APP-1500 | 4 | 21 | 25-Jul-25 | 4 | 5 | Procurement > Division 02: Sitework > Spec Section 02510 - Water Distribution System | 14-Aug-25 |
| activity | Prepare & Submit Steel Shop Drawings | SUB-3070 | 4 | 22 | 24-Jun-25 | 19 | 6 | Procurement > Division 02: Sitework > Spec Section 05210 - Structural Steel > Spec Section 05210 - Structural Steel - Submittals | 24-Jul-25 |

| row_type | text | id | page | original_duration | early_start | total_float | level | parent_path | early_finish |
| --- | --- | --- | --- | --- | --- | --- | --- | --- | --- |
| activity | Prepare & Submit HSteel Calculations | SUB-3080 | 4 | 22 | 24-Jun-25 | 19 | 6 | Procurement > Division 02: Sitework > Spec Section 05210 - Structural Steel > Spec Section 05210 - Structural Steel - Submittals | 24-Jul-25 |
| activity | Prepare & Submit Test Reports | SUB-3090 | 5 | 22 | 24-Jun-25 | 19 | 6 | Procurement > Division 02: Sitework > Spec Section 05210 - Structural Steel > Spec Section 05210 - Structural Steel - Submittals | 24-Jul-25 |
| activity | Prepare & Submit Manufacturer's Certificate of AWS Qualifications | SUB-3100 | 5 | 22 | 24-Jun-25 | 19 | 6 | Procurement > Division 02: Sitework > Spec Section 05210 - Structural Steel > Spec Section 05210 - Structural Steel - Submittals | 24-Jul-25 |
| activity | Prepare & Submit Material Product Data | SUB-3110 | 5 | 22 | 24-Jun-25 | 19 | 6 | Procurement > Division 02: Sitework > Spec Section 05210 - Structural Steel > Spec Section 05210 - Structural Steel - Submittals | 24-Jul-25 |
| activity | Prepare & Submit Anchor Adhesion Certifications | SUB-3120 | 5 | 22 | 24-Jun-25 | 19 | 6 | Procurement > Division 02: Sitework > Spec Section 05210 - Structural Steel > Spec Section 05210 - Structural Steel - Submittals | 24-Jul-25 |
| activity | Review & Approve Steel Shop Drawings | APP-1510 | 5 | 21 | 25-Jul-25 | 27 | 6 | Procurement > Division 02: Sitework > Spec Section 05210 - Structural Steel > Spec Section 05210 - Structural Steel - Approvals | 14-Aug-25 |
| activity | Review & Approve HSteel Calculations | APP-1520 | 5 | 21 | 25-Jul-25 | 27 | 6 | Procurement > Division 02: Sitework > Spec Section 05210 - Structural Steel > Spec Section 05210 - Structural Steel - Approvals | 14-Aug-25 |
| activity | Review & Approve Test Reports | APP-1530 | 5 | 21 | 25-Jul-25 | 27 | 6 | Procurement > Division 02: Sitework > Spec Section 05210 - Structural Steel > Spec Section 05210 - Structural Steel - Approvals | 14-Aug-25 |
| activity | Review & Approve Manufacturer's Certificate of AWS Qualifications | APP-1540 | 5 | 21 | 25-Jul-25 | 27 | 6 | Procurement > Division 02: Sitework > Spec Section 05210 - Structural Steel > Spec Section 05210 - Structural Steel - Approvals | 14-Aug-25 |
| activity | Review & Approve Material Product Data | APP-1550 | 5 | 21 | 25-Jul-25 | 27 | 6 | Procurement > Division 02: Sitework > Spec Section 05210 - Structural Steel > Spec Section 05210 - Structural Steel - Approvals | 14-Aug-25 |
| activity | Review & Approve Anchor Adhesion Certifications | APP-1560 | 5 | 21 | 25-Jul-25 | 27 | 6 | Procurement > Division 02: Sitework > Spec Section 05210 - Structural Steel > Spec Section 05210 - Structural Steel - Approvals | 14-Aug-25 |
| activity | Procure & Deliver Structural Steel | PRO-1000 | 5 | 60 | 15-Aug-25 | 27 | 5 | Procurement > Division 02: Sitework > Fabrication & Delivery | 13-Oct-25 |
| activity | EXPOSE Existing Water Service Line | CON-1010 | 5 | 2 | 17-Jul-25 | 8 | 4 | Construction > Preliminary Work | 18-Jul-25 |
| activity | Soil Sampling - Upper 10 Feet | CON-1020 | 5 | 2 | 17-Jul-25 | 0 | 4 | Construction > Preliminary Work | 18-Jul-25 |
| activity | Asbestos Bulk Sampling | CON-1030 | 5 | 2 | 17-Jul-25 | 8 | 4 | Construction > Preliminary Work | 18-Jul-25 |
| activity | Install Site Fence | CON-1050 | 5 | 6 | 16-Jul-25 | 1 | 4 | Construction > Preliminary Work | 23-Jul-25 |
| activity | Utility Coordination | CON-1040 | 5 | 9 | 17-Jul-25 | 1 | 4 | Construction > Preliminary Work | 29-Jul-25 |
| activity | Soil Sampling - Upper 10 Feet - Results Approval | CON-1560 | 5 | 10 | 21-Jul-25 | 1 | 4 | Construction > Preliminary Work | 01-Aug-25 |
| activity | Install Protective Tree Barriers | CON-1060 | 5 | 1 | 24-Jul-25 | 6 | 4 | Construction > Erosion Controls Work | 24-Jul-25 |
| activity | Install Temporary Construction Fence & Silt Fence | CON-1070 | 5 | 2 | 24-Jul-25 | 5 | 4 | Construction > Erosion Controls Work | 25-Jul-25 |
| activity | Install Inlet Filters | CON-1100 | 5 | 1 | 28-Jul-25 | 5 | 4 | Construction > Erosion Controls Work | 28-Jul-25 |
| activity | Install Staging & Materials Storage Area | CON-1110 | 5 | 1 | 28-Jul-25 | 5 | 4 | Construction > Erosion Controls Work | 28-Jul-25 |
| activity | Install Stabilized Construction Entrance | CON-1120 | 5 | 1 | 28-Jul-25 | 5 | 4 | Construction > Erosion Controls Work | 28-Jul-25 |
| activity | Coordinate With ConED for Electrical Service Disconnection | CON-1000 | 5 | 15 | 24-Jun-25 | 0 | 4 | Construction > ConED Work | 15-Jul-25 |
| activity | Scheduling With ConED for Electrical Service Disconnection | CON-1160 | 5 | 18 | 16-Jul-25 | 0 | 4 | Construction > ConED Work | 08-Aug-25 |
| activity | ConED Availability to Disconnect Electrical Service | CON-1170 | 5 | 0 | 11-Aug-25 | 0 | 4 | Construction > ConED Work |  |
| activity | Disconnect & Remove Existing 1200A, 208V, 3 Phase CT Cabinet, 1200/3P Fused Disconnect Switch | CON-1180 | 5 | 3 | 11-Aug-25 | 0 | 4 | Construction > ConED Work | 13-Aug-25 |
| activity | Disconnect & Remove Existing ConEdison Meter & All Associated Wiring & Conduits. | CON-1190 | 5 | 3 | 11-Aug-25 | 0 | 4 | Construction > ConED Work | 13-Aug-25 |
| activity | Disconnect & Remove Existing 1200A, 208V / 3 Phase Distribution Switchboards W/ Branch Circuit, Switch & Fuses | CON-1200 | 5 | 3 | 11-Aug-25 | 0 | 4 | Construction > ConED Work | 13-Aug-25 |
| activity | Disconnect & Remove Existing Receptacles & Lighting Fixtures W/ All Associated Wiring And Conduits | CON-1210 | 5 | 3 | 11-Aug-25 | 0 | 4 | Construction > ConED Work | 13-Aug-25 |
| activity | Disconnect & Remove Existing Underground Service Feeder & Conduits | CON-1220 | 5 | 3 | 11-Aug-25 | 0 | 4 | Construction > ConED Work | 13-Aug-25 |
| activity | Disconnect & Remove Existing Fire Alarm Panel, Pull Box & Associated Conduit & Wiring | CON-1230 | 5 | 3 | 11-Aug-25 | 0 | 4 | Construction > ConED Work | 13-Aug-25 |
| activity | ConED Work Completion | CON-1240 | 5 | 0 |  | 0 | 4 | Construction > ConED Work | 13-Aug-25 |
| activity | Mobilize Site Trailer | CON-1080 | 5 | 2 | 24-Jul-25 | 1 | 4 | Construction > Pre-Pile Work | 25-Jul-25 |
| activity | Land Surveyor Piles Layout | CON-1150 | 5 | 6 | 24-Jul-25 | 8 | 4 | Construction > Pre-Pile Work | 31-Jul-25 |
| activity | Remove Potential Asbestos Containing Utilies | CON-1090 | 5 | 3 | 30-Jul-25 | 1 | 4 | Construction > Pre-Pile Work | 01-Aug-25 |
| activity | Remove Existing Retaining Walls and Concrete Structures | CON-1250 | 5 | 7 | 24-Jul-25 | 1 | 4 | Construction > Pre-Pile Work | 01-Aug-25 |
| activity | Demolish Existing Site Fence | CON-1130 | 5 | 3 | 30-Jul-25 | 1 | 4 | Construction > Pre-Pile Work | 01-Aug-25 |
| activity | Install Monitoring Instrumentation Devices | CON-1140 | 6 | 3 | 31-Jul-25 | 6 | 4 | Construction > Pre-Pile Work | 04-Aug-25 |
| activity | Excavate to Drilling Level | CON-1260 | 6 | 10 | 05-Aug-25 | 0 | 4 | Construction > Pre-Pile Work | 18-Aug-25 |
| activity | Soil Sampling to Final Grade | CON-1290 | 6 | 5 | 08-Aug-25 | 0 | 4 | Construction > Pile Work | 14-Aug-25 |
| activity | Install North Soldier Piles - First Set | CON-1270 | 6 | 10 | 13-Aug-25 | 0 | 4 | Construction > Pile Work | 26-Aug-25 |
| activity | Install Secant Piles - CP-1 to CP-22 | CON-1300 | 6 | 10 | 13-Aug-25 | 1 | 4 | Construction > Pile Work | 26-Aug-25 |
| activity | Soil Sampling to Final Grade Results | CON-1570 | 6 | 10 | 15-Aug-25 | 19 | 4 | Construction > Pile Work | 28-Aug-25 |
| activity | Install North Soldier Piles - Second Set | CON-1540 | 6 | 7 | 27-Aug-25 | 0 | 4 | Construction > Pile Work | 05-Sep-25 |
| activity | Install Secant Piles - CP-23 to CP-44 | CON-1340 | 6 | 10 | 27-Aug-25 | 1 | 4 | Construction > Pile Work | 10-Sep-25 |
| activity | Install East Soldier Piles | CON-1280 | 6 | 7 | 08-Sep-25 | 0 | 4 | Construction > Pile Work | 16-Sep-25 |
| activity | Install Secant Piles - CP-45 to CP-54 | CON-1580 | 6 | 5 | 11-Sep-25 | 1 | 4 | Construction > Pile Work | 17-Sep-25 |
| activity | Install South Soldier Piles - First Set | CON-1590 | 6 | 7 | 17-Sep-25 | 0 | 4 | Construction > Pile Work | 25-Sep-25 |
| activity | Install West Soldier Piles | CON-1390 | 6 | 10 | 18-Sep-25 | 1 | 4 | Construction > Pile Work | 01-Oct-25 |
| activity | Install South Soldier Piles - Second Set | CON-1310 | 6 | 6 | 26-Sep-25 | 0 | 4 | Construction > Pile Work | 03-Oct-25 |
| activity | Excavate to 5 Feet Depth - North Side | CON-1320 | 6 | 10 | 11-Sep-25 | 11 | 5 | Construction > Initial Lagging & Perimeter Berm Excavation > North | 24-Sep-25 |
| activity | Install Upper Lagging - North Side | CON-1350 | 6 | 2 | 25-Sep-25 | 11 | 5 | Construction > Initial Lagging & Perimeter Berm Excavation > North | 26-Sep-25 |
| activity | Excavate & Create A Berm Along the North Perimeter | CON-1370 | 6 | 3 | 29-Sep-25 | 11 | 5 | Construction > Initial Lagging & Perimeter Berm Excavation > North | 01-Oct-25 |
| activity | Excavate to 5 Feet Depth - East Side | CON-1670 | 6 | 10 | 17-Sep-25 | 2 | 5 | Construction > Initial Lagging & Perimeter Berm Excavation > East | 30-Sep-25 |
| activity | Install Upper Lagging - East Side | CON-1360 | 6 | 2 | 01-Oct-25 | 2 | 5 | Construction > Initial Lagging & Perimeter Berm Excavation > East | 02-Oct-25 |
| activity | Excavate & Create A Berm Along the East Perimeter | CON-1400 | 6 | 3 | 03-Oct-25 | 2 | 5 | Construction > Initial Lagging & Perimeter Berm Excavation > East | 07-Oct-25 |
| activity | Excavate to 5 Feet Depth - West Side | CON-1690 | 6 | 10 | 02-Oct-25 | 1 | 5 | Construction > Initial Lagging & Perimeter Berm Excavation > West | 16-Oct-25 |
| activity | Install Upper Lagging - West Side | CON-1410 | 6 | 3 | 17-Oct-25 | 1 | 5 | Construction > Initial Lagging & Perimeter Berm Excavation > West | 21-Oct-25 |
| activity | Excavate & Create A Berm Along the West Perimeter | CON-1430 | 6 | 3 | 22-Oct-25 | 1 | 5 | Construction > Initial Lagging & Perimeter Berm Excavation > West | 24-Oct-25 |
| activity | Excavate to 5 Feet Depth - South Side | CON-1680 | 6 | 10 | 06-Oct-25 | 0 | 5 | Construction > Initial Lagging & Perimeter Berm Excavation > South | 20-Oct-25 |
| activity | Install Upper Lagging - South Side | CON-1380 | 6 | 2 | 21-Oct-25 | 0 | 5 | Construction > Initial Lagging & Perimeter Berm Excavation > South | 22-Oct-25 |
| activity | Excavate & Create A Berm Along the South Perimeter | CON-1420 | 6 | 3 | 23-Oct-25 | 0 | 5 | Construction > Initial Lagging & Perimeter Berm Excavation > South | 27-Oct-25 |
| activity | Excavate to the Bottom of Excavation - North - (HB-16 to HB-20) | CON-1440 | 6 | 6 | 02-Oct-25 | 11 | 5 | Construction > Final Excavation & SOE Bracing Elements > North | 09-Oct-25 |
| activity | Install Mini Piles Within Heel Blocks - North - (HB-16 to HB-20) | CON-1450 | 6 | 7 | 10-Oct-25 | 11 | 5 | Construction > Final Excavation & SOE Bracing Elements > North | 21-Oct-25 |
| activity | Pour Heel Blocks - North - (HB-16 to HB-20) | CON-1460 | 6 | 2 | 22-Oct-25 | 11 | 5 | Construction > Final Excavation & SOE Bracing Elements > North | 23-Oct-25 |
| activity | Backfill & Compact - North - (HB-16 to HB-20) | CON-1600 | 6 | 2 | 22-Oct-25 | 11 | 5 | Construction > Final Excavation & SOE Bracing Elements > North | 23-Oct-25 |
| activity | Install Lagging, Waler & Top Level Raker/Brace - North - (HB-16 to HB-20) | CON-1470 | 6 | 6 | 24-Oct-25 | 11 | 5 | Construction > Final Excavation & SOE Bracing Elements > North | 31-Oct-25 |
| activity | Excavate Flatten Berm - From the Top Raker to the Intermediate Raker - North - (HB-16 to HB-20) | CON-1480 | 6 | 6 | 03-Nov-25 | 11 | 5 | Construction > Final Excavation & SOE Bracing Elements > North | 10-Nov-25 |
| activity | Install Lagging, Waler & Intermediate Level Raker - North - (HB-16 to HB-20) | CON-1490 | 6 | 6 | 11-Nov-25 | 11 | 5 | Construction > Final Excavation & SOE Bracing Elements > North | 18-Nov-25 |

| row_type | text | id | page | original_duration | early_start | total_float | level | parent_path | early_finish |
| --- | --- | --- | --- | --- | --- | --- | --- | --- | --- |
| activity | Excavate Flatten Berm - From the Intermediate Raker to the Bottom Raker - North - (HB-16 to HB-20) | CON-1520 | 6 | 6 | 19-Nov-25 | 11 | 5 | Construction > Final Excavation & SOE Bracing Elements > North | 26-Nov-25 |
| activity | Install Lagging, Waler & Bottom Level Raker - North - (HB-16 to HB-20) | CON-1530 | 6 | 6 | 01-Dec-25 | 11 | 5 | Construction > Final Excavation & SOE Bracing Elements > North | 08-Dec-25 |
| activity | Excavate to the Bottom of Excavation - East - (HB-01 to HB-03) | CON-1880 | 6 | 3 | 08-Oct-25 | 2 | 5 | Construction > Final Excavation & SOE Bracing Elements > East | 10-Oct-25 |
| activity | Install Mini Piles Within Heel Blocks - East - (HB-01 to HB-03) | CON-1890 | 6 | 4 | 14-Oct-25 | 2 | 5 | Construction > Final Excavation & SOE Bracing Elements > East | 17-Oct-25 |
| activity | Pour Heel Blocks - East - (HB-01 to HB-03) | CON-1900 | 7 | 2 | 20-Oct-25 | 2 | 5 | Construction > Final Excavation & SOE Bracing Elements > East | 21-Oct-25 |
| activity | Backfill & Compact - East - (HB-01 to HB-03) | CON-1910 | 7 | 2 | 20-Oct-25 | 19 | 5 | Construction > Final Excavation & SOE Bracing Elements > East | 21-Oct-25 |
| activity | Install Lagging, Waler & Top Level Raker/Brace - East - (HB-01 to HB-03) | CON-1920 | 7 | 6 | 22-Oct-25 | 19 | 5 | Construction > Final Excavation & SOE Bracing Elements > East | 29-Oct-25 |
| activity | Excavate Flatten Berm - From the Top Raker to the Intermediate Raker - East - (HB-01 to HB-03) | CON-1930 | 7 | 4 | 30-Oct-25 | 19 | 5 | Construction > Final Excavation & SOE Bracing Elements > East | 04-Nov-25 |
| activity | Install Lagging, Waler & Intermediate Level Raker - East - (HB-01 to HB-03) | CON-1940 | 7 | 4 | 05-Nov-25 | 19 | 5 | Construction > Final Excavation & SOE Bracing Elements > East | 10-Nov-25 |
| activity | Excavate Flatten Berm - From the Intermediate Raker to the Bottom Raker - East - (HB-01 to HB-03) | CON-1950 | 7 | 4 | 11-Nov-25 | 19 | 5 | Construction > Final Excavation & SOE Bracing Elements > East | 14-Nov-25 |
| activity | Install Lagging, Waler & Bottom Level Raker - East - (HB-01 to HB-03) | CON-1960 | 7 | 6 | 17-Nov-25 | 19 | 5 | Construction > Final Excavation & SOE Bracing Elements > East | 24-Nov-25 |
| activity | Excavate to the Bottom of Excavation - West - (HB-11 to HB-15) | CON-1700 | 7 | 6 | 27-Oct-25 | 1 | 5 | Construction > Final Excavation & SOE Bracing Elements > West | 03-Nov-25 |
| activity | Install Mini Piles Within Heel Blocks - West - (HB-11 to HB-15) | CON-1710 | 7 | 6 | 04-Nov-25 | 1 | 5 | Construction > Final Excavation & SOE Bracing Elements > West | 11-Nov-25 |
| activity | Pour Heel Blocks - West - (HB-11 to HB-15) | CON-1720 | 7 | 2 | 12-Nov-25 | 1 | 5 | Construction > Final Excavation & SOE Bracing Elements > West | 13-Nov-25 |
| activity | Backfill & Compact - West - (HB-11 to HB-15) | CON-1730 | 7 | 2 | 12-Nov-25 | 1 | 5 | Construction > Final Excavation & SOE Bracing Elements > West | 13-Nov-25 |
| activity | Install Lagging, Waler & Top Level Raker/Brace - West - (HB-11 to HB-15) | CON-1740 | 7 | 6 | 14-Nov-25 | 1 | 5 | Construction > Final Excavation & SOE Bracing Elements > West | 21-Nov-25 |
| activity | Excavate Flatten Berm - From the Top Raker to the Intermediate Raker - West - (HB-11 to HB-15) | CON-1750 | 7 | 6 | 24-Nov-25 | 1 | 5 | Construction > Final Excavation & SOE Bracing Elements > West | 03-Dec-25 |
| activity | Install Lagging, Waler & Intermediate Level Raker - West - (HB-11 to HB-15) | CON-1760 | 7 | 2 | 04-Dec-25 | 1 | 5 | Construction > Final Excavation & SOE Bracing Elements > West | 05-Dec-25 |
| activity | Excavate Flatten Berm - From the Intermediate Raker to the Bottom Raker - West - (HB-11 to HB-15) | CON-1770 | 7 | 5 | 08-Dec-25 | 1 | 5 | Construction > Final Excavation & SOE Bracing Elements > West | 12-Dec-25 |
| activity | Install Lagging, Waler & Bottom Level Raker - West - (HB-11 to HB-15) | CON-1780 | 7 | 6 | 15-Dec-25 | 1 | 5 | Construction > Final Excavation & SOE Bracing Elements > West | 22-Dec-25 |
| activity | Excavate to the Bottom of Excavation - South - (HB-04 to HB-10) | CON-1790 | 7 | 8 | 28-Oct-25 | 0 | 5 | Construction > Final Excavation & SOE Bracing Elements > South | 06-Nov-25 |
| activity | Install Mini Piles Within Heel Blocks - South - (HB-04 to HB-10) | CON-1800 | 7 | 6 | 07-Nov-25 | 0 | 5 | Construction > Final Excavation & SOE Bracing Elements > South | 14-Nov-25 |
| activity | Pour Heel Blocks - South - (HB-04 to HB-10) | CON-1810 | 7 | 2 | 17-Nov-25 | 0 | 5 | Construction > Final Excavation & SOE Bracing Elements > South | 18-Nov-25 |
| activity | Backfill & Compact - South - (HB-04 to HB-10) | CON-1820 | 7 | 2 | 17-Nov-25 | 0 | 5 | Construction > Final Excavation & SOE Bracing Elements > South | 18-Nov-25 |
| activity | Install Lagging, Waler & Top Level Raker/Brace - South - (HB-04 to HB-10) | CON-1830 | 7 | 7 | 19-Nov-25 | 0 | 5 | Construction > Final Excavation & SOE Bracing Elements > South | 01-Dec-25 |
| activity | Excavate Flatten Berm - From the Top Raker to the Bottom Raker - South - (HB-04 to HB-10) | CON-1860 | 7 | 8 | 02-Dec-25 | 0 | 5 | Construction > Final Excavation & SOE Bracing Elements > South | 11-Dec-25 |
| activity | Install Lagging, Waler & Bottom Level Raker - South - (HB-04 to HB-10) | CON-1870 | 7 | 8 | 12-Dec-25 | 0 | 5 | Construction > Final Excavation & SOE Bracing Elements > South | 23-Dec-25 |
| activity | Pavement Repaving | CON-1500 | 7 | 3 | 11-Nov-25 | 13 | 4 | Construction > Landscape Work | 13-Nov-25 |
| activity | Install 4" Sidewalk | CON-1510 | 7 | 3 | 11-Nov-25 | 13 | 4 | Construction > Landscape Work | 13-Nov-25 |
| activity | Special Inspector for Piling - North - (HB-16 to HB-20) | I-1000 | 7 | 17 | 13-Aug-25 | 0 | 4 | Special Inspections > Piling | 05-Sep-25 |
| activity | Special Inspector for Piling - East - (HB-01 to HB-03) | I-1060 | 7 | 7 | 08-Sep-25 | 0 | 4 | Special Inspections > Piling | 16-Sep-25 |
| activity | Special Inspector for Piling - West - (HB-11 to HB-15) | I-1120 | 7 | 10 | 18-Sep-25 | 1 | 4 | Special Inspections > Piling | 01-Oct-25 |
| activity | Special Inspector for Piling - South - (HB-04 to HB-10) | I-1180 | 7 | 13 | 17-Sep-25 | 0 | 4 | Special Inspections > Piling | 03-Oct-25 |
| activity | Special Inspector for Excavation to Drilling Level - Pre Pile Work | I-1240 | 7 | 10 | 05-Aug-25 | 0 | 4 | Special Inspections > Excavation | 18-Aug-25 |
| activity | Special Inspector for Excavation - East - (HB-01 to HB-03) | I-1090 | 7 | 32 | 01-Oct-25 | 19 | 4 | Special Inspections > Excavation | 14-Nov-25 |
| activity | Special Inspector for Excavation - North - (HB-16 to HB-20) | I-1030 | 7 | 54 | 11-Sep-25 | 11 | 4 | Special Inspections > Excavation | 26-Nov-25 |
| activity | Special Inspector for Excavation - South - (HB-04 to HB-10) | I-1210 | 7 | 36 | 21-Oct-25 | 0 | 4 | Special Inspections > Excavation | 11-Dec-25 |
| activity | Special Inspector for Excavation - West - (HB-11 to HB-15) | I-1150 | 7 | 39 | 17-Oct-25 | 1 | 4 | Special Inspections > Excavation | 12-Dec-25 |
| activity | Special Inspector for Sheeting - East - (HB-01 to HB-03) | I-1100 | 7 | 38 | 01-Oct-25 | 19 | 4 | Special Inspections > Sheeting | 24-Nov-25 |
| activity | Special Inspector for Sheeting - North - (HB-16 to HB-20) | I-1040 | 7 | 50 | 25-Sep-25 | 11 | 4 | Special Inspections > Sheeting | 08-Dec-25 |
| activity | Special Inspector for Sheeting - West - (HB-11 to HB-15) | I-1160 | 7 | 45 | 17-Oct-25 | 1 | 4 | Special Inspections > Sheeting | 22-Dec-25 |
| activity | Special Inspector for Sheeting - South - (HB-04 to HB-10) | I-1220 | 8 | 44 | 21-Oct-25 | 0 | 4 | Special Inspections > Sheeting | 23-Dec-25 |
| activity | Special Inspector for Concrete - East - (HB-01 to HB-03) | I-1070 | 8 | 2 | 20-Oct-25 | 19 | 4 | Special Inspections > Concrete | 21-Oct-25 |
| activity | Special Inspector for Concrete - North - (HB-16 to HB-20) | I-1010 | 8 | 2 | 22-Oct-25 | 11 | 4 | Special Inspections > Concrete | 23-Oct-25 |
| activity | Special Inspector for Concrete - West - (HB-11 to HB-15) | I-1130 | 8 | 2 | 12-Nov-25 | 1 | 4 | Special Inspections > Concrete | 13-Nov-25 |
| activity | Special Inspector for Concrete - South - (HB-04 to HB-10) | I-1190 | 8 | 2 | 17-Nov-25 | 0 | 4 | Special Inspections > Concrete | 18-Nov-25 |
| activity | Special Inspector for Backfill & Compact - East - (HB-01 to HB-03) | I-1080 | 8 | 2 | 20-Oct-25 | 19 | 4 | Special Inspections > Backfilling & Compaction | 21-Oct-25 |
| activity | Special Inspector for Backfill & Compact - North - (HB-16 to HB-20) | I-1020 | 8 | 2 | 22-Oct-25 | 11 | 4 | Special Inspections > Backfilling & Compaction | 23-Oct-25 |
| activity | Special Inspector for Backfill & Compact - West - (HB-11 to HB-15) | I-1140 | 8 | 2 | 12-Nov-25 | 1 | 4 | Special Inspections > Backfilling & Compaction | 13-Nov-25 |
| activity | Special Inspector for Backfill & Compact - South - (HB-04 to HB-10) | I-1200 | 8 | 2 | 17-Nov-25 | 0 | 4 | Special Inspections > Backfilling & Compaction | 18-Nov-25 |
| activity | Special Inspector for Welding - East - (HB-01 to HB-03) | I-1110 | 8 | 24 | 22-Oct-25 | 19 | 4 | Special Inspections > Welding | 24-Nov-25 |
| activity | Special Inspector for Welding - North - (HB-16 to HB-20) | I-1050 | 8 | 30 | 24-Oct-25 | 11 | 4 | Special Inspections > Welding | 08-Dec-25 |
| activity | Special Inspector for Welding - West - (HB-11 to HB-15) | I-1170 | 8 | 25 | 14-Nov-25 | 1 | 4 | Special Inspections > Welding | 22-Dec-25 |
| activity | Special Inspector for Welding - South - (HB-04 to HB-10) | I-1230 | 8 | 23 | 19-Nov-25 | 0 | 4 | Special Inspections > Welding | 23-Dec-25 |
| activity | GC Inspections | CLO-1000 | 8 | 4 | 05-Dec-25 | 0 | 3 | Closeout | 08-Dec-25 |
| activity | GC Punchlist | CLO-1010 | 8 | 12 | 09-Dec-25 | 0 | 3 | Closeout | 20-Dec-25 |
| activity | Reconfigure Fence, Repair Sidewalk, Remove Trailers And Demobilization | CLO-1020 | 8 | 3 | 21-Dec-25 | 0 | 3 | Closeout | 23-Dec-25 |
