| row_type | text | id | page | original_duration | remaining_duration | actual_duration | early_start | late_start | total_float | level | parent_path | early_finish | late_finish |
| --- | --- | --- | --- | --- | --- | --- | --- | --- | --- | --- | --- | --- | --- |
| activity | Notice to Proceed (9/23/2024) | A1000 | 1 | 0 | 0 | 0 | 9/23/24 | 9/23/24 | 0 | 3 | MAJOR MILESTONES |  |  |
| activity | Complete 1-Storey Building Demolition | A1030 | 1 | 0 | 0 | 0 |  |  | 0 | 3 | MAJOR MILESTONES | 3/19/25 | 3/19/25 |
| activity | Complete Adjacent Property Building Facade | A1050 | 1 | 0 | 0 | 0 |  |  | 0 | 3 | MAJOR MILESTONES | 4/8/25 | 4/8/25 |
| activity | Complete Site Removals | A1060 | 1 | 0 | 0 | 0 |  |  | 0 | 3 | MAJOR MILESTONES | 5/14/25 | 5/14/25 |
| activity | Complete Site Improvements | A1040 | 1 | 0 | 0 | 0 |  |  | 0 | 3 | MAJOR MILESTONES | 6/6/25 | 6/6/25 |
| activity | Substantial Completion (6/20/2025) - 270 CCDs from NTP as per Phasing Exhib | A1010 | 1 | 0 | 0 | 0 |  |  | 0 | 3 | MAJOR MILESTONES | 6/20/25* | 6/20/25 |
| activity | Final Completion (9/22/2025) - 365 CCDs as per NTP Letter | A1020 | 1 | 0 | 0 | 0 |  |  | 0 | 3 | MAJOR MILESTONES | 9/22/25* | 9/22/25 |
| activity | NYCSCA to Provide Copies of Zone of Public Protection Plan | A3270 | 1 | 21 | 21 | 0 | 9/23/24 | 9/23/24 | 0 | 4 | PRE-CONSTRUCTION > PERMITS & PROCEDURES | 10/22/24 | 10/22/24 |
| activity | GC to Notify Licensor/Neighbor in Writing Before Commencement of Phase1 (De | A3990 | 1 | 21 | 21 | 0 | 9/23/24 | 9/23/24 | 0 | 4 | PRE-CONSTRUCTION > PERMITS & PROCEDURES | 10/22/24 | 10/22/24 |
| activity | GC to Notify Licensor/Neighbor in Writing Prior to Any Property Protection Installa | A4000 | 1 | 10 | 10 | 0 | 9/23/24 | 10/8/24 | 11 | 4 | PRE-CONSTRUCTION > PERMITS & PROCEDURES | 10/4/24 | 10/22/24 |
| activity | GC to Notify the NYCSCA for Soil Sampling | A3340 | 1 | 2 | 2 | 0 | 9/23/24 | 10/22/24 | 20 | 4 | PRE-CONSTRUCTION > SOIL SAMPLING | 9/24/24 | 10/23/24 |
| activity | Perform Soil Sampling as Required | A3350 | 1 | 3 | 3 | 0 | 9/25/24 | 10/24/24 | 20 | 4 | PRE-CONSTRUCTION > SOIL SAMPLING | 9/27/24 | 10/28/24 |
| activity | GC to Notify Licensor/Neighbor of Pre-construction Survey | A3940 | 1 | 3 | 3 | 0 | 10/23/24 | 10/23/24 | 0 | 4 | PRE-CONSTRUCTION > PRE-CONSTRUCTION SURVEY | 10/25/24 | 10/25/24 |
| activity | Perform Pre-construction Survey | A3950 | 1 | 10 | 10 | 0 | 10/28/24 | 10/28/24 | 0 | 4 | PRE-CONSTRUCTION > PRE-CONSTRUCTION SURVEY | 11/7/24 | 11/7/24 |
| activity | Submit Pre-construction Survey Report | A3960 | 1 | 5 | 5 | 0 | 11/8/24 | 11/8/24 | 0 | 4 | PRE-CONSTRUCTION > PRE-CONSTRUCTION SURVEY | 11/15/24 | 11/15/24 |
| activity | Licensor/Neighbor to Notify Licensee/Construction Team of Any Changes to the | A4040 | 1 | 10 | 10 | 0 | 11/18/24 | 11/18/24 | 0 | 4 | PRE-CONSTRUCTION > PRE-CONSTRUCTION SURVEY | 12/2/24 | 12/2/24 |
| activity | GC to Make Changes Upon Receiving Notice from Licensor/Neighbor or Prior to | A4050 | 1 | 10 | 10 | 0 | 12/3/24 | 12/3/24 | 0 | 4 | PRE-CONSTRUCTION > PRE-CONSTRUCTION SURVEY | 12/16/24 | 12/16/24 |
| activity | NYCSCA to Provide Licensor/Neighbor with Code Compliant Set of Drawings & P | A3970 | 1 | 10 | 10 | 0 | 9/23/24 | 9/30/24 | 5 | 4 | PRE-CONSTRUCTION > PROPERTY PROTECTION PLAN | 10/4/24 | 10/11/24 |
| activity | Licensor/Neighbor to Review & Confer Comments to Licensee/Construction Tear | A3980 | 1 | 10 | 10 | 0 | 10/7/24 | 10/15/24 | 5 | 4 | PRE-CONSTRUCTION > PROPERTY PROTECTION PLAN | 10/21/24 | 10/28/24 |
| activity | Monitoring Plan Meeting | A4010 | 1 | 5 | 5 | 0 | 11/18/24 | 12/3/24 | 10 | 4 | PRE-CONSTRUCTION > MONITORING PLAN | 11/22/24 | 12/9/24 |
| activity | GC to Notify Licensor/Neighbor to Permit Access for Monitoring Equipment | A4020 | 1 | 5 | 5 | 0 | 11/25/24 | 12/10/24 | 10 | 4 | PRE-CONSTRUCTION > MONITORING PLAN | 12/2/24 | 12/16/24 |
| activity | Install Vibration Monitors, Optical Survey Marks and/or Electronic Survey Equipm | A4030 | 1 | 10 | 10 | 0 | 12/3/24 | 12/17/24 | 10 | 4 | PRE-CONSTRUCTION > MONITORING PLAN | 12/16/24 | 12/31/24 |
| activity | Prep/Submit Site Safety Plan | A3020 | 1 | 10 | 10 | 0 | 9/23/24 | 9/23/24 | 0 | 4 | PRE-CONSTRUCTION > SITE SAFETY PLAN | 10/4/24 | 10/4/24 |
| activity | Review/Approve Site Safety Plan | A3030 | 1 | 15 | 15 | 0 | 10/7/24 | 10/7/24 | 0 | 4 | PRE-CONSTRUCTION > SITE SAFETY PLAN | 10/28/24 | 10/28/24 |
| activity | Schedule/Attend SCA/TMG Meeting for Permit Requirements | A3120 | 1 | 10 | 10 | 0 | 9/23/24 | 10/15/24 | 15 | 4 | PRE-CONSTRUCTION > SCA/TMG MEETING | 10/4/24 | 10/28/24 |
| activity | Prep/Submit Quality Control Plan | A3040 | 1 | 10 | 10 | 0 | 9/23/24 | 11/25/24 | 44 | 4 | PRE-CONSTRUCTION > QUALITY CONTROL PLAN | 10/4/24 | 12/9/24 |
| activity | Review/Approve Quality Control Plan | A3050 | 1 | 15 | 15 | 0 | 10/7/24 | 12/10/24 | 44 | 4 | PRE-CONSTRUCTION > QUALITY CONTROL PLAN | 10/28/24 | 12/31/24 |
| activity | Prep/Submit Construction Waste Management Plan | A3060 | 1 | 10 | 10 | 0 | 9/23/24 | 11/25/24 | 44 | 4 | PRE-CONSTRUCTION > CONSTRUCTION WASTE MANAGEMENT PLAN | 10/4/24 | 12/9/24 |
| activity | Review/Approve Construction Waste Management Plan | A3070 | 1 | 15 | 15 | 0 | 10/7/24 | 12/10/24 | 44 | 4 | PRE-CONSTRUCTION > CONSTRUCTION WASTE MANAGEMENT PLAN | 10/28/24 | 12/31/24 |
| activity | Prep/Submit Safety Program | A3080 | 1 | 10 | 10 | 0 | 9/23/24 | 11/25/24 | 44 | 4 | PRE-CONSTRUCTION > SAFETY PROGRAM | 10/4/24 | 12/9/24 |
| activity | Review/Approve Safety Program | A3090 | 1 | 15 | 15 | 0 | 10/7/24 | 12/10/24 | 44 | 4 | PRE-CONSTRUCTION > SAFETY PROGRAM | 10/28/24 | 12/31/24 |
| activity | Prep/Submit Indoor Air Quality Plan | A3100 | 1 | 10 | 10 | 0 | 9/23/24 | 11/25/24 | 44 | 4 | PRE-CONSTRUCTION > INDOOR AIR QUALITY (IAQ) PLAN | 10/4/24 | 12/9/24 |
| activity | Review/Approve Indoor Air Quality Plan | A3110 | 1 | 15 | 15 | 0 | 10/7/24 | 12/10/24 | 44 | 4 | PRE-CONSTRUCTION > INDOOR AIR QUALITY (IAQ) PLAN | 10/28/24 | 12/31/24 |
| activity | Prep/Submit All Initial TR-1 Structural Stability | A3280 | 1 | 10 | 10 | 0 | 9/23/24 | 11/25/24 | 44 | 4 | PRE-CONSTRUCTION > TR-1 - STRUCTURAL STABILITY | 10/4/24 | 12/9/24 |
| activity | Approve/Obtain TR-1 Structural Stability | A3290 | 1 | 15 | 15 | 0 | 10/7/24 | 12/10/24 | 44 | 4 | PRE-CONSTRUCTION > TR-1 - STRUCTURAL STABILITY | 10/28/24 | 12/31/24 |
| activity | Prep/Submit TR-3 Concrete Design Mix Technical Report | A3300 | 2 | 10 | 10 | 0 | 9/23/24 | 11/25/24 | 44 | 4 | PRE-CONSTRUCTION > TR-3 - CONCRETE DESIGN MIX TECHNICAL REPORT | 10/4/24 | 12/9/24 |
| activity | Approve/Obtain TR-3 Concrete Design Mix Technical Report | A3310 | 2 | 15 | 15 | 0 | 10/7/24 | 12/10/24 | 44 | 4 | PRE-CONSTRUCTION > TR-3 - CONCRETE DESIGN MIX TECHNICAL REPORT | 10/28/24 | 12/31/24 |
| activity | Prep/Submit Temp. Egress Plan for Closed Exits or Exit Paths | A3360 | 2 | 10 | 10 | 0 | 9/23/24 | 11/25/24 | 44 | 4 | PRE-CONSTRUCTION > TEMPORARY EGRESS PLAN | 10/4/24 | 12/9/24 |
| activity | Review/Approve Temp. Egress Plan for Closed Exits or Exit Paths | A3370 | 2 | 15 | 15 | 0 | 10/7/24 | 12/10/24 | 44 | 4 | PRE-CONSTRUCTION > TEMPORARY EGRESS PLAN | 10/28/24 | 12/31/24 |
| activity | Field Survey, Test & Report - ACM | A3210 | 2 | 10 | 10 | 0 | 9/23/24 | 9/30/24 | 5 | 4 | PRE-CONSTRUCTION > PERMITS > ASBESTOS ABATEMENT PERMIT | 10/4/24 | 10/11/24 |
| activity | Obtain DEP Variance | A3220 | 2 | 5 | 5 | 0 | 10/7/24 | 10/15/24 | 5 | 4 | PRE-CONSTRUCTION > PERMITS > ASBESTOS ABATEMENT PERMIT | 10/11/24 | 10/21/24 |
| activity | File/Obtain Asbestos Abatement Variance ACP-5 | A3230 | 2 | 5 | 5 | 0 | 10/15/24 | 10/22/24 | 5 | 4 | PRE-CONSTRUCTION > PERMITS > ASBESTOS ABATEMENT PERMIT | 10/21/24 | 10/28/24 |
| activity | Prep/Submit Fence Application Permit | A3320 | 2 | 10 | 10 | 0 | 9/23/24 | 4/10/25 | 137 | 4 | PRE-CONSTRUCTION > PERMITS > FENCE PERMIT | 10/4/24 | 4/23/25 |
| activity | Approve/Obtain Fence Permit | A3330 | 2 | 15 | 15 | 0 | 10/7/24 | 4/24/25 | 137 | 4 | PRE-CONSTRUCTION > PERMITS > FENCE PERMIT | 10/28/24 | 5/14/25 |
| activity | Obtain All DOB Work Permit Types | A3380 | 2 | 20 | 20 | 0 | 10/29/24 | 10/29/24 | 0 | 4 | PRE-CONSTRUCTION > PERMITS > DOB WORK PERMIT TYPES | 11/25/24 | 11/25/24 |
| activity | Bonds & Insurances | A3240 | 2 | 40 | 40 | 0 | 9/23/24 | 10/4/24 | 9 | 3 | PRE-CONSTRUCTION > MOBILIZATION | 11/18/24 | 12/2/24 |
| activity | Mobilization | A3250 | 2 | 4 | 4 | 0 | 11/26/24 | 11/26/24 | 0 | 3 | PRE-CONSTRUCTION > MOBILIZATION | 12/2/24 | 12/2/24 |
| activity | Setup/Facilitate Temp. Power, & Furnishing Field Offices | A3260 | 2 | 10 | 10 | 0 | 12/3/24 | 12/3/24 | 0 | 3 | PRE-CONSTRUCTION > MOBILIZATION | 12/16/24 | 12/16/24 |
| activity | Prep/Submit MEP Coordination Drawings | A3390 | 2 | 21 | 21 | 0 | 9/23/24 | 11/7/24 | 33 | 5 | SUBMITTALS, APPROVALS, PROCUREMENTS > DIVISION 2 - SITE WORK > COORDINATION DRAWINGS | 10/22/24 | 12/9/24 |
| activity | Review/Approve MEP Coordination Drawings | A3400 | 2 | 15 | 15 | 0 | 10/23/24 | 12/10/24 | 33 | 5 | SUBMITTALS, APPROVALS, PROCUREMENTS > DIVISION 2 - SITE WORK > COORDINATION DRAWINGS | 11/12/24 | 12/31/24 |
| activity | Prep/Submit Building Demolition Shop Drawings | A3130 | 2 | 21 | 21 | 0 | 9/23/24 | 11/7/24 | 33 | 5 | SUBMITTALS, APPROVALS, PROCUREMENTS > DIVISION 2 - SITE WORK > 02060 - BUILDING DEMOLITION | 10/22/24 | 12/9/24 |
| activity | Prep/Submit Building Demolition Shop Drawings | A3140 | 2 | 15 | 15 | 0 | 10/23/24 | 12/10/24 | 33 | 5 | SUBMITTALS, APPROVALS, PROCUREMENTS > DIVISION 2 - SITE WORK > 02060 - BUILDING DEMOLITION | 11/12/24 | 12/31/24 |
| activity | Prep/Submit Asbestos Abatement | A3150 | 2 | 21 | 21 | 0 | 9/23/24 | 10/25/24 | 23 | 5 | SUBMITTALS, APPROVALS, PROCUREMENTS > DIVISION 2 - SITE WORK > 02081 - ASBESTOS ABATEMENT | 10/22/24 | 11/22/24 |
| activity | Review/Approve Asbestos Abatement | A3160 | 2 | 15 | 15 | 0 | 10/23/24 | 11/25/24 | 23 | 5 | SUBMITTALS, APPROVALS, PROCUREMENTS > DIVISION 2 - SITE WORK > 02081 - ASBESTOS ABATEMENT | 11/12/24 | 12/16/24 |
| activity | Prep/Submit Asphaltic Concrete Paving Shop Drawings | A3170 | 2 | 21 | 21 | 0 | 9/23/24 | 3/28/25 | 128 | 5 | SUBMITTALS, APPROVALS, PROCUREMENTS > DIVISION 2 - SITE WORK > 02511 - ASPHALTIC CONCRETE PAVING | 10/22/24 | 4/25/25 |
| activity | Review/Approve Asphaltic Concrete Paving Shop Drawings | A3180 | 2 | 15 | 15 | 0 | 10/23/24 | 4/28/25 | 128 | 5 | SUBMITTALS, APPROVALS, PROCUREMENTS > DIVISION 2 - SITE WORK > 02511 - ASPHALTIC CONCRETE PAVING | 11/12/24 | 5/16/25 |
| activity | Prep/Submit Sidewalk & Street Paving Shop Drawings | A3190 | 2 | 21 | 21 | 0 | 9/23/24 | 4/3/25 | 132 | 5 | SUBMITTALS, APPROVALS, PROCUREMENTS > DIVISION 2 - SITE WORK > 02513 - SIDEWALK & STREET PAVING | 10/22/24 | 5/1/25 |
| activity | Review/Approve Sidewalk & Street Paving Shop Drawings | A3200 | 2 | 15 | 15 | 0 | 10/23/24 | 5/2/25 | 132 | 5 | SUBMITTALS, APPROVALS, PROCUREMENTS > DIVISION 2 - SITE WORK > 02513 - SIDEWALK & STREET PAVING | 11/12/24 | 5/22/25 |
| activity | Abate Confirmed ACM Roof Screed/Membrane/Flashing/Tar/Tar Below Coping S | A3410 | 2 | 10 | 10 | 0 | 12/17/24 | 12/17/24 | 0 | 5 | CONSTRUCTION > LLW NO.: 127569 - EARLY DEMOLITION PACKAGE > ASBESTOS ABATEMENT - DWG H101-H201 | 12/31/24 | 12/31/24 |
| activity | Abate Confirmed ACM Pipe/Pipe Joint/Breeching/Duct Insulation & Debris | A3420 | 2 | 10 | 10 | 0 | 12/17/24 | 12/17/24 | 0 | 5 | CONSTRUCTION > LLW NO.: 127569 - EARLY DEMOLITION PACKAGE > ASBESTOS ABATEMENT - DWG H101-H201 | 12/31/24 | 12/31/24 |
| activity | Abate Confirmed ACM Floor Tiles/Mastic & Floor Tiles Debris | A3430 | 2 | 10 | 10 | 0 | 12/17/24 | 12/17/24 | 0 | 5 | CONSTRUCTION > LLW NO.: 127569 - EARLY DEMOLITION PACKAGE > ASBESTOS ABATEMENT - DWG H101-H201 | 12/31/24 | 12/31/24 |
| activity | Remove Roof in its Entirety | A3440 | 2 | 5 | 5 | 0 | 1/2/25 | 1/2/25 | 0 | 6 | CONSTRUCTION > LLW NO.: 127569 - EARLY DEMOLITION PACKAGE > 1-STOREY MASONRY BUILDING (21-31 DELAVAN STREET) > MAIN ROOF | 1/8/25 | 1/8/25 |
| activity | Remove Exist'g Rooftop A/C Units | A3450 | 2 | 5 | 5 | 0 | 1/9/25 | 1/9/25 | 0 | 6 | CONSTRUCTION > LLW NO.: 127569 - EARLY DEMOLITION PACKAGE > 1-STOREY MASONRY BUILDING (21-31 DELAVAN STREET) > MAIN ROOF | 1/15/25 | 1/15/25 |
| activity | Remove Deck & Supports Down to Foundation Only | A3460 | 2 | 5 | 5 | 0 | 1/16/25 | 1/16/25 | 0 | 6 | CONSTRUCTION > LLW NO.: 127569 - EARLY DEMOLITION PACKAGE > 1-STOREY MASONRY BUILDING (21-31 DELAVAN STREET) > MAIN ROOF | 1/22/25 | 1/22/25 |
| activity | NB - Protect Adjacent Property Structure as Req'd | A3500 | 2 | 2 | 2 | 0 | 1/23/25 | 1/23/25 | 0 | 6 | CONSTRUCTION > LLW NO.: 127569 - EARLY DEMOLITION PACKAGE > 1-STOREY MASONRY BUILDING (21-31 DELAVAN STREET) > NORTH BUILDING ELEVATION - DWG 2/DM104 | 1/24/25 | 1/24/25 |
| activity | NB - Remove Entire Exist'g A/C Unit | A3510 | 2 | 4 | 4 | 0 | 1/27/25 | 1/27/25 | 0 | 6 | CONSTRUCTION > LLW NO.: 127569 - EARLY DEMOLITION PACKAGE > 1-STOREY MASONRY BUILDING (21-31 DELAVAN STREET) > NORTH BUILDING ELEVATION - DWG 2/DM104 | 1/30/25 | 1/30/25 |
| activity | NB - Remove Entire Exist'g Windows | A3520 | 2 | 4 | 4 | 0 | 1/31/25 | 1/31/25 | 0 | 6 | CONSTRUCTION > LLW NO.: 127569 - EARLY DEMOLITION PACKAGE > 1-STOREY MASONRY BUILDING (21-31 DELAVAN STREET) > NORTH BUILDING ELEVATION - DWG 2/DM104 | 2/5/25 | 2/5/25 |
| activity | NB - Remove Entire Exist'g Rolling Door | A3530 | 2 | 4 | 4 | 0 | 2/6/25 | 2/6/25 | 0 | 6 | CONSTRUCTION > LLW NO.: 127569 - EARLY DEMOLITION PACKAGE > 1-STOREY MASONRY BUILDING (21-31 DELAVAN STREET) > NORTH BUILDING ELEVATION - DWG 2/DM104 | 2/11/25 | 2/11/25 |
| activity | NB - Remove Entire Exist'g Exterior Wall | A3540 | 2 | 4 | 4 | 0 | 2/13/25 | 2/13/25 | 0 | 6 | CONSTRUCTION > LLW NO.: 127569 - EARLY DEMOLITION PACKAGE > 1-STOREY MASONRY BUILDING (21-31 DELAVAN STREET) > NORTH BUILDING ELEVATION - DWG 2/DM104 | 2/19/25 | 2/19/25 |
| activity | EB - Protect Adjacent Property Structure as Req'd | A3470 | 2 | 5 | 5 | 0 | 1/9/25 | 1/31/25 | 16 | 6 | CONSTRUCTION > LLW NO.: 127569 - EARLY DEMOLITION PACKAGE > 1-STOREY MASONRY BUILDING (21-31 DELAVAN STREET) > EAST BUILDING ELEVATION - DWG 1/DM104 | 1/15/25 | 2/6/25 |

| row_type | text | id | page | original_duration | remaining_duration | actual_duration | early_start | late_start | total_float | level | parent_path | early_finish | late_finish |
| --- | --- | --- | --- | --- | --- | --- | --- | --- | --- | --- | --- | --- | --- |
| activity | EB - Remove Entire Exist'g Windows | A3480 | 2 | 5 | 5 | 0 | 1/16/25 | 2/7/25 | 16 | 6 | CONSTRUCTION > LLW NO.: 127569 - EARLY DEMOLITION PACKAGE > 1-STOREY MASONRY BUILDING (21-31 DELAVAN STREET) > EAST BUILDING ELEVATION - DWG 1/DM104 | 1/22/25 | 2/14/25 |
| activity | EB - Remove Entire Exist'g Exterior Wall | A3490 | 2 | 5 | 5 | 0 | 1/23/25 | 2/18/25 | 16 | 6 | CONSTRUCTION > LLW NO.: 127569 - EARLY DEMOLITION PACKAGE > 1-STOREY MASONRY BUILDING (21-31 DELAVAN STREET) > EAST BUILDING ELEVATION - DWG 1/DM104 | 1/29/25 | 2/24/25 |
| activity | SB - Protect Adjacent Property Structure as Req'd | A3550 | 2 | 5 | 5 | 0 | 2/20/25 | 2/25/25 | 3 | 6 | CONSTRUCTION > LLW NO.: 127569 - EARLY DEMOLITION PACKAGE > 1-STOREY MASONRY BUILDING (21-31 DELAVAN STREET) > SOUTH BUILDING ELEVATION - DWG 3/DM104 | 2/26/25 | 3/3/25 |
| activity | SB - Remove Entire Exist'g Windows | A3560 | 2 | 5 | 5 | 0 | 2/27/25 | 3/4/25 | 3 | 6 | CONSTRUCTION > LLW NO.: 127569 - EARLY DEMOLITION PACKAGE > 1-STOREY MASONRY BUILDING (21-31 DELAVAN STREET) > SOUTH BUILDING ELEVATION - DWG 3/DM104 | 3/5/25 | 3/10/25 |
| activity | SB - Remove Entire Exist'g Exterior Wall | A3570 | 2 | 5 | 5 | 0 | 3/6/25 | 3/11/25 | 3 | 6 | CONSTRUCTION > LLW NO.: 127569 - EARLY DEMOLITION PACKAGE > 1-STOREY MASONRY BUILDING (21-31 DELAVAN STREET) > SOUTH BUILDING ELEVATION - DWG 3/DM104 | 3/12/25 | 3/17/25 |
| activity | WB - Protect Adjacent Property Structure as Req'd | A3580 | 3 | 2 | 2 | 0 | 2/20/25 | 2/20/25 | 0 | 6 | CONSTRUCTION > LLW NO.: 127569 - EARLY DEMOLITION PACKAGE > 1-STOREY MASONRY BUILDING (21-31 DELAVAN STREET) > WEST BUILDING ELEVATION - DWG 4/DM104 | 2/21/25 | 2/21/25 |
| activity | WB - Remove Entire Exist'g Windows | A3590 | 3 | 4 | 4 | 0 | 2/24/25 | 2/24/25 | 0 | 6 | CONSTRUCTION > LLW NO.: 127569 - EARLY DEMOLITION PACKAGE > 1-STOREY MASONRY BUILDING (21-31 DELAVAN STREET) > WEST BUILDING ELEVATION - DWG 4/DM104 | 2/27/25 | 2/27/25 |
| activity | WB - Remove Entire Exist'g Stairs | A3600 | 3 | 4 | 4 | 0 | 2/28/25 | 2/28/25 | 0 | 6 | CONSTRUCTION > LLW NO.: 127569 - EARLY DEMOLITION PACKAGE > 1-STOREY MASONRY BUILDING (21-31 DELAVAN STREET) > WEST BUILDING ELEVATION - DWG 4/DM104 | 3/5/25 | 3/5/25 |
| activity | WB - Remove Entire Exist'g Door | A3610 | 3 | 4 | 4 | 0 | 3/6/25 | 3/6/25 | 0 | 6 | CONSTRUCTION > LLW NO.: 127569 - EARLY DEMOLITION PACKAGE > 1-STOREY MASONRY BUILDING (21-31 DELAVAN STREET) > WEST BUILDING ELEVATION - DWG 4/DM104 | 3/11/25 | 3/11/25 |
| activity | WB - Remove Entire Exist'g Exterior Wall | A3620 | 3 | 4 | 4 | 0 | 3/12/25 | 3/12/25 | 0 | 6 | CONSTRUCTION > LLW NO.: 127569 - EARLY DEMOLITION PACKAGE > 1-STOREY MASONRY BUILDING (21-31 DELAVAN STREET) > WEST BUILDING ELEVATION - DWG 4/DM104 | 3/17/25 | 3/17/25 |
| activity | EWSB - Remove Entire Exist'g Mezzanine & All Components | A3630 | 3 | 2 | 2 | 0 | 3/18/25 | 3/18/25 | 0 | 6 | CONSTRUCTION > LLW NO.: 127569 - EARLY DEMOLITION PACKAGE > 1-STOREY MASONRY BUILDING (21-31 DELAVAN STREET) > EAST-WEST SECTION B - DWG 4/DM105 | 3/19/25 | 3/19/25 |
| activity | EWSCB - Remove Entire Ext'g Roof Trusses | A3640 | 3 | 2 | 2 | 0 | 3/18/25 | 3/18/25 | 0 | 6 | CONSTRUCTION > LLW NO.: 127569 - EARLY DEMOLITION PACKAGE > 1-STOREY MASONRY BUILDING (21-31 DELAVAN STREET) > EAST-WEST SECTION CUT B - DWG 2/DM105 | 3/19/25 | 3/19/25 |
| activity | APEBF - Repair Brick | A3870 | 3 | 2 | 2 | 0 | 3/20/25 | 3/20/25 | 0 | 5 | CONSTRUCTION > LLW NO.: 127569 - EARLY DEMOLITION PACKAGE > SECTION AT ADJACENT PROPERTY EXTERIOR BUILDING FACADE - DWG 7/DM104 | 3/21/25 | 3/21/25 |
| activity | APEBF - Replace Brick | A3880 | 3 | 2 | 2 | 0 | 3/24/25 | 3/24/25 | 0 | 5 | CONSTRUCTION > LLW NO.: 127569 - EARLY DEMOLITION PACKAGE > SECTION AT ADJACENT PROPERTY EXTERIOR BUILDING FACADE - DWG 7/DM104 | 3/25/25 | 3/25/25 |
| activity | APEBF - Infill Brick | A3890 | 3 | 2 | 2 | 0 | 3/26/25 | 3/26/25 | 0 | 5 | CONSTRUCTION > LLW NO.: 127569 - EARLY DEMOLITION PACKAGE > SECTION AT ADJACENT PROPERTY EXTERIOR BUILDING FACADE - DWG 7/DM104 | 3/27/25 | 3/27/25 |
| activity | APEBF - Repair Concrete | A3900 | 3 | 2 | 2 | 0 | 3/28/25 | 3/28/25 | 0 | 5 | CONSTRUCTION > LLW NO.: 127569 - EARLY DEMOLITION PACKAGE > SECTION AT ADJACENT PROPERTY EXTERIOR BUILDING FACADE - DWG 7/DM104 | 3/31/25 | 3/31/25 |
| activity | APEBF - Repoint Brick | A3910 | 3 | 2 | 2 | 0 | 4/1/25 | 4/1/25 | 0 | 5 | CONSTRUCTION > LLW NO.: 127569 - EARLY DEMOLITION PACKAGE > SECTION AT ADJACENT PROPERTY EXTERIOR BUILDING FACADE - DWG 7/DM104 | 4/2/25 | 4/2/25 |
| activity | APEBF - Masonry Washdown | A3920 | 3 | 2 | 2 | 0 | 4/3/25 | 4/3/25 | 0 | 5 | CONSTRUCTION > LLW NO.: 127569 - EARLY DEMOLITION PACKAGE > SECTION AT ADJACENT PROPERTY EXTERIOR BUILDING FACADE - DWG 7/DM104 | 4/4/25 | 4/4/25 |
| activity | APEBF - CID Masonry Inspection | A3930 | 3 | 2 | 2 | 0 | 4/7/25 | 4/7/25 | 0 | 5 | CONSTRUCTION > LLW NO.: 127569 - EARLY DEMOLITION PACKAGE > SECTION AT ADJACENT PROPERTY EXTERIOR BUILDING FACADE - DWG 7/DM104 | 4/8/25 | 4/8/25 |
| activity | RDS - Install Site Protection | A3650 | 3 | 2 | 2 | 0 | 4/9/25 | 4/9/25 | 0 | 6 | CONSTRUCTION > LLW NO.: 127569 - EARLY DEMOLITION PACKAGE > SITE REMOVALS - DWG DM10 > SITE REMOVALS - DELAVAN STREET ELEVATION | 4/10/25 | 4/10/25 |
| activity | RDS - Remove Exist'g Asphalt Pavement & Subbase (for Sewer Service Remova | A3660 | 3 | 4 | 4 | 0 | 4/11/25 | 4/11/25 | 0 | 6 | CONSTRUCTION > LLW NO.: 127569 - EARLY DEMOLITION PACKAGE > SITE REMOVALS - DWG DM10 > SITE REMOVALS - DELAVAN STREET ELEVATION | 4/16/25 | 4/16/25 |
| activity | RDS - Remove Exist'g Concrete Curb | A3670 | 3 | 4 | 4 | 0 | 4/17/25 | 4/17/25 | 0 | 6 | CONSTRUCTION > LLW NO.: 127569 - EARLY DEMOLITION PACKAGE > SITE REMOVALS - DWG DM10 > SITE REMOVALS - DELAVAN STREET ELEVATION | 4/22/25 | 4/22/25 |
| activity | RDS - Remove Exist'g Asphalt Pavement & Subbase (for Gas Service Removal) | A3680 | 3 | 4 | 4 | 0 | 4/23/25 | 4/23/25 | 0 | 6 | CONSTRUCTION > LLW NO.: 127569 - EARLY DEMOLITION PACKAGE > SITE REMOVALS - DWG DM10 > SITE REMOVALS - DELAVAN STREET ELEVATION | 4/28/25 | 4/28/25 |
| activity | RDS - Remove Exist'g Concrete Pavement & Subbase (for Sewer & Gas Servic | A3690 | 3 | 4 | 4 | 0 | 4/29/25 | 4/29/25 | 0 | 6 | CONSTRUCTION > LLW NO.: 127569 - EARLY DEMOLITION PACKAGE > SITE REMOVALS - DWG DM10 > SITE REMOVALS - DELAVAN STREET ELEVATION | 5/2/25 | 5/2/25 |
| activity | RDS - Cut, Cap & Remove from Bldg to Sewer Main Exist'g Sewer Service | A3760 | 3 | 4 | 4 | 0 | 5/5/25 | 5/5/25 | 0 | 6 | CONSTRUCTION > LLW NO.: 127569 - EARLY DEMOLITION PACKAGE > SITE REMOVALS - DWG DM10 > SITE REMOVALS - DELAVAN STREET ELEVATION | 5/8/25 | 5/8/25 |
| activity | RDS - Cut, Cap & Remove from Bldg to Gas Main Exist'g Gas Service | A3770 | 3 | 4 | 4 | 0 | 5/9/25 | 5/9/25 | 0 | 6 | CONSTRUCTION > LLW NO.: 127569 - EARLY DEMOLITION PACKAGE > SITE REMOVALS - DWG DM10 > SITE REMOVALS - DELAVAN STREET ELEVATION | 5/14/25 | 5/14/25 |
| activity | RRS - Install Site Protection | A3700 | 3 | 5 | 5 | 0 | 4/9/25 | 5/1/25 | 16 | 6 | CONSTRUCTION > LLW NO.: 127569 - EARLY DEMOLITION PACKAGE > SITE REMOVALS - DWG DM10 > SITE REMOVALS - RICHARDS STREET ELEVATION | 4/15/25 | 5/7/25 |
| activity | RRS - Remove Exist'g Tree to Grade | A3710 | 3 | 5 | 5 | 0 | 4/16/25 | 5/8/25 | 16 | 6 | CONSTRUCTION > LLW NO.: 127569 - EARLY DEMOLITION PACKAGE > SITE REMOVALS - DWG DM10 > SITE REMOVALS - RICHARDS STREET ELEVATION | 4/22/25 | 5/14/25 |
| activity | RVS - Install Site Protection | A3720 | 3 | 4 | 4 | 0 | 4/9/25 | 4/9/25 | 0 | 6 | CONSTRUCTION > LLW NO.: 127569 - EARLY DEMOLITION PACKAGE > SITE REMOVALS - DWG DM10 > SITE REMOVALS - VERONA STREET ELEVATION | 4/14/25 | 4/14/25 |
| activity | RVS - Remove Exist'g Asphalt Pavement & Subbase (for Sewer Service Remova | A3730 | 3 | 5 | 5 | 0 | 4/15/25 | 4/15/25 | 0 | 6 | CONSTRUCTION > LLW NO.: 127569 - EARLY DEMOLITION PACKAGE > SITE REMOVALS - DWG DM10 > SITE REMOVALS - VERONA STREET ELEVATION | 4/21/25 | 4/21/25 |
| activity | RVS - Remove Exist'g Concrete Curb | A3740 | 3 | 4 | 4 | 0 | 4/22/25 | 4/22/25 | 0 | 6 | CONSTRUCTION > LLW NO.: 127569 - EARLY DEMOLITION PACKAGE > SITE REMOVALS - DWG DM10 > SITE REMOVALS - VERONA STREET ELEVATION | 4/25/25 | 4/25/25 |
| activity | RVS - Remove Exist'g Concrete Pavement & Subbase (for Sewer Service Remc | A3750 | 3 | 5 | 5 | 0 | 4/28/25 | 4/28/25 | 0 | 6 | CONSTRUCTION > LLW NO.: 127569 - EARLY DEMOLITION PACKAGE > SITE REMOVALS - DWG DM10 > SITE REMOVALS - VERONA STREET ELEVATION | 5/2/25 | 5/2/25 |
| activity | RVS - Cut, Cap & Remove from Bldg to Sewer Main Exist'g Sewer Service | A3780 | 3 | 4 | 4 | 0 | 5/5/25 | 5/5/25 | 0 | 6 | CONSTRUCTION > LLW NO.: 127569 - EARLY DEMOLITION PACKAGE > SITE REMOVALS - DWG DM10 > SITE REMOVALS - VERONA STREET ELEVATION | 5/8/25 | 5/8/25 |
| activity | IDS - Install Construction Fence | A3790 | 3 | 2 | 2 | 0 | 5/15/25 | 5/15/25 | 0 | 6 | CONSTRUCTION > LLW NO.: 127569 - EARLY DEMOLITION PACKAGE > SITE IMPROVEMENTS - DWG C020 > SITE IMPROVEMENTS - DELAVAN STREET ELEVATION | 5/16/25 | 5/16/25 |
| activity | IDS - Install New Asphalt Pavement | A3800 | 3 | 4 | 4 | 0 | 5/19/25 | 5/19/25 | 0 | 6 | CONSTRUCTION > LLW NO.: 127569 - EARLY DEMOLITION PACKAGE > SITE IMPROVEMENTS - DWG C020 > SITE IMPROVEMENTS - DELAVAN STREET ELEVATION | 5/22/25 | 5/22/25 |
| activity | IDS - Install New Concrete Pavement | A3810 | 3 | 5 | 5 | 0 | 5/23/25 | 5/23/25 | 0 | 6 | CONSTRUCTION > LLW NO.: 127569 - EARLY DEMOLITION PACKAGE > SITE IMPROVEMENTS - DWG C020 > SITE IMPROVEMENTS - DELAVAN STREET ELEVATION | 5/30/25 | 5/30/25 |
| activity | IDS - Install New Concrete Curb | A3820 | 3 | 5 | 5 | 0 | 6/2/25 | 6/2/25 | 0 | 6 | CONSTRUCTION > LLW NO.: 127569 - EARLY DEMOLITION PACKAGE > SITE IMPROVEMENTS - DWG C020 > SITE IMPROVEMENTS - DELAVAN STREET ELEVATION | 6/6/25 | 6/6/25 |
| activity | IVS - Install Construction Fence | A3830 | 3 | 5 | 5 | 0 | 5/9/25 | 5/9/25 | 0 | 6 | CONSTRUCTION > LLW NO.: 127569 - EARLY DEMOLITION PACKAGE > SITE IMPROVEMENTS - DWG C020 > SITE IMPROVEMENTS - VERONA STREET ELEVATION | 5/15/25 | 5/15/25 |
| activity | IVS - Install New Asphalt Pavement | A3840 | 3 | 5 | 5 | 0 | 5/16/25 | 5/16/25 | 0 | 6 | CONSTRUCTION > LLW NO.: 127569 - EARLY DEMOLITION PACKAGE > SITE IMPROVEMENTS - DWG C020 > SITE IMPROVEMENTS - VERONA STREET ELEVATION | 5/22/25 | 5/22/25 |
| activity | IVS - Install New Concrete Pavement | A3850 | 3 | 5 | 5 | 0 | 5/23/25 | 5/23/25 | 0 | 6 | CONSTRUCTION > LLW NO.: 127569 - EARLY DEMOLITION PACKAGE > SITE IMPROVEMENTS - DWG C020 > SITE IMPROVEMENTS - VERONA STREET ELEVATION | 5/30/25 | 5/30/25 |
| activity | IVS - Install New Concrete Curb | A3860 | 3 | 5 | 5 | 0 | 6/2/25 | 6/2/25 | 0 | 6 | CONSTRUCTION > LLW NO.: 127569 - EARLY DEMOLITION PACKAGE > SITE IMPROVEMENTS - DWG C020 > SITE IMPROVEMENTS - VERONA STREET ELEVATION | 6/2/25 | 6/2/25 |
| activity | Prep/Submit Final Record Drawings | A2970 | 3 | 5 | 5 | 0 | 6/9/25 | 6/9/25 | 0 | 3 | PROJECT CLOSE-OUT | 6/13/25 | 6/13/25 |
| activity | Final Clean-up | A3010 | 3 | 5 | 5 | 0 | 6/9/25 | 6/9/25 | 0 | 3 | PROJECT CLOSE-OUT | 6/13/25 | 6/13/25 |
| activity | Remove Adjacent Property Structure Protection | A2980 | 3 | 5 | 5 | 0 | 6/9/25 | 6/9/25 | 0 | 3 | PROJECT CLOSE-OUT | 6/13/25 | 6/13/25 |
| activity | DOB Final Inspection & Sign-off | A2990 | 3 | 5 | 5 | 0 | 6/16/25 | 6/16/25 | 0 | 3 | PROJECT CLOSE-OUT | 6/20/25 | 6/20/25 |
| activity | Punch List Work | A3000 | 3 | 65 | 65 | 0 | 6/23/25 | 6/23/25 | 0 | 3 | PROJECT CLOSE-OUT | 9/22/25 | 9/22/25 |
